# ARCA -SGC

Schedule from MS Project, 2024-01-01 to 2024-08-12, status date 2024-04-29, costs in $, A marks actual dates.

## Calendars

- calendario ARCA: Mon-Sat 08:00-12:00, 13:00-17:00; Sun off.

## Resources

| Resource | Group | Rate | Notes |
| --- | --- | --- | --- |
| No Asignado |  |  |  |
| Javier pradel |  |  |  |
| Daniela M. Olivares Muñiz |  |  |  |
| Eloisa Flores | Servicios Administrativos |  |  |
| Ismael Rincon |  |  |  |
| Visitaduria Medica |  |  |  |
| todos |  |  |  |
| Jazmin I. Carapia Valladares |  |  |  |
| Marisol Briseño |  |  |  |
| Javier Carapia |  |  |  |
| Claudia Reyes |  |  |  |
| Fernando Chavarria |  |  |  |
| Victor Baltazar |  |  |  |
| Jose Carapia |  |  |  |
| Nisa Alvalrez |  |  | 22abr24 solo pidio cubrebocas, se le comento que hiciera el vale copleto |
| Servicios Administrativos |  |  |  |
| Leidy |  |  |  |
| Manuel |  |  |  |
| Gustavo |  |  |  |
| Victoria Castaneda |  |  |  |
| Sistemas |  |  |  |
| Fernando Chavarria |  |  |  |
| jue 11/04/24 |  | 10 |  |
| lun 15/04/24 |  | 10 |  |
| Katya Atempa |  | 10 |  |
| Angelito |  | 10 |  |
| Katya2 Atempa2 |  | 10 |  |

## Schedule

| ID | WBS | Task | Duration | Start | Finish | Predecessors | Complete | Remaining | Total slack | Free slack | Constraint | Resources | Work | Actual work | Cost | Actual cost |
| --- | --- | --- | --- | --- | --- | --- | --- | --- | --- | --- | --- | --- | --- | --- | --- | --- |
| 1 | 1 | **4. Requisitos Generales** | 115.12d? | 2024-04-01 A | 2024-08-12 |  | 52% | 55.46d? |  |  |  |  | 1234.18h | 592.34h | 168 | 110.16 |
| 2 | 1.1 | **4.1 Imparcialidad** | 17d? | 2024-04-01 A | 2024-04-20 |  | 84% | 2.71d? | 97.5d |  |  |  | 248.84h | 221.64h | 72 | 70.4 |
| 3 | 1.1.1 | política de imparcialidad, FOR-RRH-36 | 15d | 2024-04-01 A | 2024-04-20 |  | 90% | 1.5d | 97.5d |  | finish no earlier than 2024-04-20 | Nisa Alvalrez | 120h | 108h |  |  |
| 4 | 1.1.1.1 | **Firma de personal activo** | 2.88d? | 2024-04-08 A | 2024-04-10 |  | 80% | 0.57d? | 105.5d |  | start no earlier than 2024-04-05 | Eloisa Flores [133.3%] | 88h | 72.8h | 8 | 6.4 |
| 5 | 1.1.2.1 | **Perfil de puestos** | 2.88d? | 2024-04-08 A | 2024-04-10 |  | 90% | 0.29d? | 105.5d |  |  |  | 48h | 43.2h |  |  |
| 6 | 1.1.2.1.1 | **Pendientes** | 2.88d? | 2024-04-08 A | 2024-04-10 |  | 90% | 0.29d? | 105.5d |  | start no earlier than 2024-04-08 | Nisa Alvalrez | 48h | 43.2h |  |  |
| 7 | 1.1.2.1.1.1 | PLan de induccion | 1d? | 2024-04-08 A | 2024-04-08 |  | 90% | 0.1d? | 1d | 0.12d |  | Nisa Alvalrez | 8h | 7.2h |  |  |
| 8 | 1.1.2.1.1.2 | Asignacion de tareas | 1d? | 2024-04-09 A | 2024-04-09 | 7 | 90% | 0.1d? | 1d | 0.12d |  | Nisa Alvalrez | 8h | 7.2h |  |  |
| 9 | 1.1.2.1.1.3 | Nombramientos | 1d? | 2024-04-10 A | 2024-04-10 | 8 | 90% | 0.1d? | 105.5d |  |  | Nisa Alvalrez | 8h | 7.2h |  |  |
| 10 | 1.1.2.2 | **Firmas digitales** | 0.88d? | 2024-04-08 A | 2024-04-08 |  | 50% | 0.44d? | 107.5d |  | start no earlier than 2024-04-08 | Nisa Alvalrez | 8h | 4h |  |  |
| 11 | 1.1.2.2.1 | Evaluaciones | 1d? | 2024-04-08 A | 2024-04-08 |  | 50% | 0.5d? | 107.5d |  |  | Nisa Alvalrez | 8h | 4h |  |  |
| 12 | 6.5 | Retiro de equipos | 2d | 2024-04-08 A | 2024-04-10 A |  | 100% |  |  |  | start no earlier than 2024-04-01 | Fernando Chavarria [105.3%] | 16.84h | 16.84h | 40 | 40 |
| 13 | 1.1.2 | código de ética, FOR-RRH-04 | 2d | 2024-04-08 A | 2024-04-10 A |  | 100% |  |  |  |  | Eloisa Flores [133.3%] | 8h | 8h | 8 | 8 |
| 14 | 5.10 | AMEF | 2d | 2024-04-01 | 2024-04-02 |  |  |  | 112.5d |  |  |  |  |  |  |  |
| 15 | 1.1.3 | compromiso de confidencialidad, FOR-RRH03) | 1d | 2024-04-09 A | 2024-04-10 A |  | 100% |  |  |  |  | Eloisa Flores [133.3%] | 8h | 8h | 8 | 8 |
| 16 | 1.1.4 | declaración de conflicto de interés (FOR-RRH-05). | 1d | 2024-04-09 A | 2024-04-10 A |  | 100% |  |  |  | start no earlier than 2024-04-09 | Eloisa Flores [133.3%] | 8h | 8h | 8 | 8 |
| 17 | 1.2 | **4.2 Confidencialidad** | 8d | 2024-04-08 A | 2024-04-16 |  | 50% | 4d | 100.5d |  |  |  | 72h | 40h | 8 | 4 |
| 18 | 1.2.1 | Contrato de confidencialidad para entidades externa | 8d | 2024-04-08 A | 2024-04-16 |  | 50% | 4d | 100.5d |  | start no earlier than 2024-04-08 | Eloisa Flores [133.3%] | 72h | 40h | 8 | 4 |
| 19 | 1.3 | **4.3 Requisitos relativos a los pacientes** | 31d? | 2024-04-08 A | 2024-05-13 |  | 40% | 18.53d? | 77.5d |  |  |  | 913.33h | 330.7h | 88 | 35.76 |
| 20 | 1.3.1 | **derechos y deberes de los pacientes (DOC-GEN-02)** | 11d | 2024-04-08 A | 2024-04-19 |  | 95% | 0.55d | 97.5d |  |  | Ismael Rincon | 122.67h | 111.2h | 16 | 15.2 |
| 21 | 1.3.1.1 | Marketing digital | 5d | 2024-04-08 A | 2024-04-12 |  | 95% | 0.25d | 5.95d | 0d | start no earlier than 2024-04-08 | Ismael Rincon [133.3%] | 53.33h | 48h | 8 | 7.6 |
| 22 | 1.3.1.2 | Impreta | 6d | 2024-04-13 A | 2024-04-19 | 21 | 95% | 0.3d | 97.5d |  | start no earlier than 2024-04-08 | Ismael Rincon [133.3%] | 53.33h | 48h | 8 | 7.6 |
| 23 | 1.3.2 | **procedimiento de atención a pacientes (POT-REC-01)** | 5.88d? | 2024-04-12 A | 2024-04-18 |  | 80% | 1.18d? | 98.5d |  | start no earlier than 2024-04-12 | Ismael Rincon [133.3%] | 38h | 30.4h | 8 | 6.4 |
| 24 | 1.3.2.1 | Capacitacion al procedmiento parte 1 | 1d | 2024-04-12 A | 2024-04-12 A |  | 100% |  |  |  | start no earlier than 2024-04-12 | Javier pradel; Ismael Rincon | 16h | 16h |  |  |
| 25 | 1.3.2.2 | Capacitacion al procedimiento parte 2 | 0.88d? | 2024-04-18 A | 2024-04-18 | 24 | 57% | 0.38d? | 98.5d |  | start no earlier than 2024-04-18 | Ismael Rincon; Javier pradel | 14h | 8h |  |  |
| 26 | 1.3.3 | catalogo de servicios (FOR-VEN-03) | 1d | 2024-04-19 | 2024-04-19 |  |  |  | 96.5d |  | start no earlier than 2024-04-19 | Visitaduria Medica [133.3%] | 10.67h |  | 8 |  |

Notes:
- 6: hostter intendencia mensajeria CA tecnica de equios BIomedicos CA Tecnica Auxiliar de laboratorio

| ID | WBS | Task | Type | Duration | Start | Finish | Predecessors | Complete | Remaining | Total slack | Free slack | Constraint | Resources | Work | Actual work | Cost | Actual cost |
| --- | --- | --- | --- | --- | --- | --- | --- | --- | --- | --- | --- | --- | --- | --- | --- | --- | --- |
| 27 | 1.3.4 | **revisión mensual de los indicadores de desempeño analítico (FOR-CAL-04)** |  | 15d? | 2024-04-08 | 2024-04-25 |  |  |  | 93.5d |  |  |  | 40h |  | 24 |  |
| 28 | 1.3.4.1 | PNC Preexamen |  | 1d | 2024-04-23 | 2024-04-23 |  |  |  | 93.5d |  | start no earlier than 2024-04-23 | Ismael Rincon [133.3%] | 10.67h |  | 8 |  |
| 29 | 1.3.4.2 | Tiempo de espera |  | 3d | 2024-04-08 | 2024-04-10 |  |  |  | 104.5d |  | start no earlier than 2024-04-08 | Ismael Rincon [133.3%] | 29.33h |  | 8 |  |
| 30 | 1.3.4.3 | **Entrega Oportuna** |  | 0d? | 2024-04-25 | 2024-04-25 |  |  |  | 93.5d |  | start no earlier than 2024-04-25 | Ismael Rincon [133.3%] |  |  | 8 |  |
| 31 | 1.3.4.3.1 | Lista de estudios fuera del sistema | milestone | 0d? | 2024-04-25 | 2024-04-25 |  |  |  | 93.5d |  | start no earlier than 2024-04-08 |  |  |  |  |  |
| 32 | 1.3.5 | PRO-CAL-08 Atencion a no conformidades |  | 1d | 2024-04-26 | 2024-04-26 |  |  |  | 90.5d |  | start no earlier than 2024-04-26 | Ismael Rincon [133.3%] | 10.67h |  | 8 |  |
| 33 | 1.3.6 | **Manual para la toma, identificación, manejo, conservación y transporte de muestras (MAN-PRE-01)** |  | 1d | 2024-04-29 A | 2024-04-29 |  | 57% | 0.43d | 89.5d |  | start no earlier than 2024-04-27 | Ismael Rincon | 54h | 28.97h | 8 | 4.56 |
| 34 | 1.3.6.1 | Mochilas de transporte |  | 1d | 2024-04-29 A | 2024-04-29 |  | 90% | 0.1d | 89.5d |  | start no earlier than 2024-04-08 | Ismael Rincon; Jose Carapia | 16h | 14.4h |  |  |
| 35 | 1.3.6.2 | Termometro |  | 1d | 2024-04-29 | 2024-04-29 |  |  |  | 88.38d |  | start no earlier than 2024-04-08 | Ismael Rincon; Jose Carapia | 16h |  |  |  |
| 36 | 1.3.6.3 | Obseervaciones al procedimiento MAN-PRE-01 | manual | 1.88d | 2024-04-29 A | 2024-04-29 |  | 70% | 0.56d |  |  |  | Ismael Rincon | 14h | 10h |  |  |
| 37 | 1.3.7 | OC-GEN-01 Plan de contingencia_jpm.docx |  | 7d? | 2024-04-08 A | 2024-04-16 |  | 90% | 0.7d? | 100.5d |  | start no earlier than 2024-04-08 | Ismael Rincon | 56h | 50.4h |  |  |
| 38 | 1.3.8 | Capacitacion Holter, Map,ekg |  | 1d? | 2024-04-19 | 2024-04-19 |  |  |  | 96.38d |  | start no earlier than 2024-04-19 | Marisol Briseño; Nisa Alvalrez; Ismael Rincon | 18h |  |  |  |
| 39 | 1.3.9 | Bata Azul |  | 5d? | 2024-04-08 | 2024-04-12 |  |  |  | 102.38d |  | start no earlier than 2024-04-08 | Ismael Rincon | 40h |  |  |  |
| 40 | 1.3.10 | nstructivos de orina |  | 5d? | 2024-04-08 | 2024-04-12 |  |  |  | 102.38d |  | start no earlier than 2024-04-08 | Ismael Rincon | 40h |  |  |  |
| 41 | 1.3.11 | Eses fecales |  | 4d? | 2024-04-08 | 2024-04-11 |  |  |  | 103.38d |  | start no earlier than 2024-04-08 | Ismael Rincon | 30h |  |  |  |
| 42 | 1.3.12 | Solicitar bolsas RPBI para el mensajero |  | 5d? | 2024-04-08 A | 2024-04-12 |  | 90% | 0.5d? | 103.5d |  | start no earlier than 2024-04-08 | Ismael Rincon | 40h | 36h |  |  |
| 43 | 1.3.13 | Telefono para el mensajero |  | 2d? | 2024-04-08 | 2024-04-09 |  |  |  | 105.38d |  | start no earlier than 2024-04-08 | Jazmin I. Carapia Valladares; Ismael Rincon | 24h |  |  |  |
| 44 | 1.3.7 | control de registro (PRO-CAL-03) |  | 1d | 2024-04-29 A | 2024-04-29 |  | 70% | 0.3d | 89.5d |  | start no earlier than 2024-04-29 | Ismael Rincon [133.3%] | 10.67h | 5.33h | 8 | 5.6 |
| 45 | 1.4 | Actualización de Insumos por estudio |  | 1d? | 2024-04-30 A | 2024-04-30 |  | 50% | 0.5d? | 88.5d |  | start no earlier than 2024-04-30 | Daniela M. Olivares Muñiz [133.3%] | 10.67h | 4h | 8 | 4 |
| 46 | 1.3.16 | **Solicitud de plantillas** |  | 30.88d | 2024-04-08 A | 2024-05-13 |  | 18% | 25.47d | 77.5d |  |  | Javier pradel | 368h | 64.4h |  |  |
| 47 | 1.3.16.1 | ENDOSCOPIA Y COLONOSCOPIA |  | 5d | 2024-04-23 A | 2024-04-30 |  | 35% | 3.25d | 1d | 0.12d | finish no earlier than 2024-04-30 | Javier pradel | 40h | 14h |  |  |
| 48 | 1.3.16.2 | PLATILLA DE RM |  | 5d | 2024-04-30 A | 2024-05-06 | 47 | 20% | 4d | 0.5d | 0.12d | finish no earlier than 2024-04-30 | Javier pradel | 40h | 8h |  |  |
| 49 | 1.3.16.3 | MASTOGRAFIA |  | 5d | 2024-05-07 A | 2024-05-13 | 48 | 10% | 4.5d | 77.5d |  | finish no earlier than 2024-04-30 | Javier pradel | 40h | 4h |  |  |
| 50 | 1.3.16.4 | ELECTROENCEFALOGRAMA |  | 5d | 2024-04-08 A | 2024-04-12 |  | 5% | 4.75d | 103.5d |  | start no earlier than 2024-04-08 | Javier pradel | 40h | 2h |  |  |

Notes:
- 38: viernes, 19, la hora esta por dsfinirse

| ID | WBS | Task | Type | Duration | Start | Finish | Predecessors | Complete | Remaining | Total slack | Constraint | Resources | Work | Actual work | Cost | Actual cost |
| --- | --- | --- | --- | --- | --- | --- | --- | --- | --- | --- | --- | --- | --- | --- | --- | --- |
| 51 | 2 | **5. Requisitos estructurales y de gobernanza** |  | 27d | 2024-04-08 A | 2024-05-08 |  | 14% | 23.11d | 81.5d |  |  | 216h | 35h | 8 | 4 |
| 52 | 2.1 | **5.1 Entidad Legal** |  | 0d | 2024-05-03 A | 2024-05-03 |  |  | 0d | 86.5d |  |  |  |  | 8 | 4 |
| 53 | 2.1.1 | Descripción de puestos | milestone | 0d | 2024-05-03 A | 2024-05-03 |  | 50% | 0d | 86.5d | start no earlier than 2024-05-03 | Eloisa Flores [133.3%] |  |  | 8 | 4 |
| 54 | 2.2 | **5.5 Objetivos y politicas** |  | 27d | 2024-04-08 A | 2024-05-08 |  | 14% | 23.11d | 0d |  |  | 216h | 35h |  |  |
| 55 | 2.2.1 | Puerta de emergencia de proceso (quimico) jun.2023 | manual | 10d | 2024-04-08 A | 2024-04-18 |  | 10% | 9d |  |  | Javier pradel | 72h | 8h |  |  |
| 56 | 2.2.2 | Lista maestra de indicadores FOR-CAL-04) | manual | 11d | 2024-04-08 A | 2024-04-30 | 55 | 9% | 10d |  |  | Javier pradel | 72h | 8h |  |  |
| 57 | 2.2.3 | Plan de mejora (FOR-CAL-15) | manual | 10.25d | 2024-04-08 A | 2024-05-08 | 56 | 24% | 7.75d |  |  | Javier pradel | 72h | 19h |  |  |
| 58 | 3 | **6. Requerimientos de recursos** |  | 122.25d? | 2024-01-01 A | 2024-05-22 |  | 15% | 103.32d? | 70.12d |  |  | 4262.99h | 817.98h | 2,173.06 | 308.35 |
| 59 | 3.1 | **6.2 Personal** |  | 68.38d? | 2024-03-04 A | 2024-05-22 |  | 6% | 64.45d? | 70.12d |  | Eloisa Flores | 1277h | 80.49h |  |  |
| 60 | 3.1.1 | **Integracion del expediente** |  | 60d? | 2024-03-04 A | 2024-05-13 |  | 2% | 58.74d? | 78.5d |  | Eloisa Flores | 761h | 17.09h |  |  |
| 61 | 3.1.1.1 | **Documentos pendientes** |  | 60d? | 2024-03-04 A | 2024-05-13 |  | 2% | 58.77d? | 78.5d |  | Eloisa Flores | 681h | 15.09h |  |  |
| 62 | 3.1.1.1.1 | Firmas de la DG |  | 2.88d? | 2024-04-17 A | 2024-04-19 |  | 70% | 0.86d? | 97.5d | start no earlier than 2024-04-17 | Eloisa Flores | 21h | 15.09h |  |  |
| 63 | 3.1.1.1.2 | Evaluaciones (evaluacion de conocimientos y habilidades FOR-RRH-12) | manual | 12.62d | 2024-03-04 | 2024-03-18 |  |  |  |  |  | Eloisa Flores | 86h |  |  |  |
| 65 | 3.1.1.1.3 | Plan de induccion (FOR-RRH-09) | manual | 6.62d | 2024-05-06 | 2024-05-13 |  |  |  |  |  | Eloisa Flores | 46h |  |  |  |
| 66 | 3.1.1.1.4 | Descripcion de perfiles (FOR-RRH-07) | manual | 58.62d | 2024-03-06 | 2024-05-13 |  |  |  |  |  | Eloisa Flores | 390h |  |  |  |
| 67 | 3.1.1.1.5 | Nombramientos | manual | 1.88d | 2024-05-06 | 2024-05-06 |  |  |  |  |  | Javier pradel | 14h |  |  |  |
| 68 | 3.1.1.1.6 | Confidencialiodad | manual | 1.62d | 2024-05-06 | 2024-05-07 |  |  |  |  |  | Javier pradel | 14h |  |  |  |
| 69 | 3.1.1.1.7 | codigo de etica | manual | 1.62d | 2024-05-06 | 2024-05-07 |  |  |  |  |  | Javier pradel | 14h |  |  |  |
| 70 | 3.1.1.1.8 | Conflicto de interes | manual | 1.62d | 2024-05-06 | 2024-05-07 |  |  |  |  |  | Javier pradel | 14h |  |  |  |
| 71 | 3.1.1.1.9 | politica de imparcialidad | manual | 1.62d | 2024-05-06 | 2024-05-07 |  |  |  |  |  | Javier pradel | 14h |  |  |  |
| 72 | 3.1.1.1.10 | Acciodentes y estado de inmunizacion (FOR-RRH-36) | manual | 1d | 2024-05-06 | 2024-05-06 |  |  |  |  |  | Javier pradel | 8h |  |  |  |
| 73 | 3.1.1.1.11 | El plan de induccion cambia por puesto? | manual | 1.88d | 2024-05-06 | 2024-05-06 |  |  |  |  |  | Javier pradel | 14h |  |  |  |
| 74 | 3.1.1.1.12 | EVALUACIÓN DEL DESEMPEÑO FOR-RRH-11 | manual | 5.88d | 2024-05-06 | 2024-05-10 |  |  |  |  |  | Eloisa Flores | 46h |  |  |  |
| 75 | 3.1.1.2 | **Documentos** |  | 22.25d | 2024-04-15 A | 2024-05-10 |  | 3% | 21.69d | 80.12d |  |  | 80h | 2h |  |  |
| 76 | 3.1.1.2.1 | Miguel Angel Flores Hernandez |  | 5d | 2024-04-15 A | 2024-04-19 |  | 5% | 4.75d | 97.5d | start no earlier than 2024-04-15 | Eloisa Flores | 40h | 2h |  |  |
| 77 | 3.1.1.2.2 | Axel Arcangel Sandoval Hidalgo | manual | 5d | 2024-05-06 | 2024-05-10 |  |  |  |  |  | Eloisa Flores | 40h |  |  |  |
| 78 | 3.1.2 | QUick del acceso a expedientes |  | 1d? | 2024-04-18 A | 2024-04-18 |  | 40% | 0.6d? | 98.5d | start no earlier than 2024-04-18 | Nisa Alvalrez | 8h | 3.2h |  |  |

Notes:
- 62: Evalauciones FOR-RHH-11, FOR-RHH-12 y FOR-RHH-16 perfil de puestos

| ID | WBS | Task | Type | Duration | Start | Finish | Complete | Remaining | Total slack | Resources | Work | Actual work |
| --- | --- | --- | --- | --- | --- | --- | --- | --- | --- | --- | --- | --- |
| 79 | 3.1.3 | **Servicio administrativos** |  | 44.38d | 2024-04-01 A | 2024-05-22 | 11% | 39.58d | 0d |  | 508h | 60.2h |
| 80 | 3.1.3.1 | Movmientos de personal | manual | 4d | 2024-04-08 A | 2024-04-11 | 20% | 3.2d |  | Nisa Alvalrez | 32h | 6.4h |
| 81 | 3.1.3.2 | Examen de nuevo ingreso recepcion | manual | 4d | 2024-04-08 A | 2024-04-11 A | 100% |  |  | Nisa Alvalrez | 32h | 32h |
| 82 | 3.1.3.3 | FOR-RRH-12 Evaluación de habilidades y conocimientos | manual | 4d | 2024-04-08 A | 2024-04-11 | 20% | 3.2d |  | Nisa Alvalrez | 32h | 6.4h |
| 83 | 3.1.3.4 | Documetacion del radiologo | manual | 7d | 2024-04-08 A | 2024-04-15 | 20% | 5.6d |  | Nisa Alvalrez | 48h | 10.2h |
| 84 | 3.1.3.5 | Temario para la recepcionistas | manual | 5d | 2024-05-07 | 2024-05-11 |  |  |  | Nisa Alvalrez | 40h |  |
| 85 | 3.1.3.6 | **Formato de entrega de unidad** |  | 14.38d | 2024-05-06 | 2024-05-22 |  |  | 0d |  | 236h |  |
| 86 | 3.1.3.6.1 | Clave | manual | 1.88d | 2024-05-06 | 2024-05-06 |  |  |  | Javier pradel | 14h |  |
| 87 | 3.1.3.6.2 | Descripcion por area | manual | 15d | 2024-05-06 | 2024-05-22 |  |  |  | Nisa Alvalrez | 104h |  |
| 88 | 3.1.3.6.3 | Inventario | manual | 15d | 2024-05-06 | 2024-05-22 |  |  |  | Nisa Alvalrez | 104h |  |
| 89 | 3.1.3.6.4 | Meterlo a la plantilla | manual | 1d? | 2024-05-06 | 2024-05-06 |  |  |  |  |  |  |
| 90 | 3.1.3.6.5 | Perfil de rrhh (nisa) | manual | 1.88d | 2024-05-06 | 2024-05-06 |  |  |  | Javier pradel | 14h |  |
| 91 | 3.1.3.7 | LIberar el modulo de RRH para obtener el ID | manual | 13d | 2024-04-01 A | 2024-04-15 | 5% | 12.35d |  | Javier pradel | 88h | 5.2h |
| 92 | 3.2 | **6.3 Instalaciones y condiciones ambientales** |  | 35d | 2024-04-01 A | 2024-05-10 | 35% | 22.64d | 79.5d |  | 1116h | 468h |
| 93 | 3.2.1 | Capacitacion de RPBI | manual | 5d | 2024-04-23 A | 2024-04-27 A | 100% |  |  | Claudia Reyes | 40h | 40h |
| 94 | 3.2.2 | **Carpeta para formatos de seguridad e higiene** |  | 25.88d | 2024-04-01 A | 2024-04-29 | 99% | 0d |  | Claudia Reyes | 182h | 174h |
| 95 | 3.2.2.1 | La portada | manual | 1d | 2024-04-01 A | 2024-04-01 A | 100% |  |  | Claudia Reyes | 8h | 8h |
| 96 | 3.2.3 | Preguntar con VB el tiempo de resguardo de los documentso | manual | 8d | 2024-04-01 | 2024-04-09 |  |  |  | Javier pradel | 56h |  |
| 97 | 3.2.4 | Colocar otro bote en bacter | manual | 3d | 2024-04-01 A | 2024-04-03 A | 100% |  |  | Claudia Reyes | 24h | 24h |
| 98 | 3.2.5 | Horario de depurar refri de muestras | manual | 6.88d | 2024-04-13 A | 2024-04-19 | 50% | 3.44d |  | Claudia Reyes | 54h | 26.5h |
| 99 | 3.2.6 | **Carpetas para rPBI manifistos** |  | 24d | 2024-04-13 A | 2024-05-10 | 20% | 19.26d | 0d | Claudia Reyes | 250h | 50h |
| 100 | 3.2.6.1 | La portada | manual | 4.88d | 2024-05-07 | 2024-05-10 |  |  |  | Claudia Reyes | 38h |  |
| 101 | 3.2.6.2 | Carpeta | manual | 4.88d | 2024-05-07 A | 2024-05-10 A | 100% |  |  | Claudia Reyes | 38h | 38h |
| 102 | 3.2.6.3 | Los manifistos se archivan en la carpeta | manual | 20.62d | 2024-04-13 A | 2024-05-07 | 5% | 19.5d |  | Claudia Reyes | 142h | 10h |

| ID | WBS | Task | Type | Duration | Start | Finish | Complete | Remaining | Total slack | Constraint | Resources | Work | Actual work | Cost | Actual cost |
| --- | --- | --- | --- | --- | --- | --- | --- | --- | --- | --- | --- | --- | --- | --- | --- |
| 103 | 3.2.7 | **Carpeta de facturas RPBI** |  | 4d | 2024-05-07 A | 2024-05-10 | 50% | 2d | 0d |  | Claudia Reyes | 108h | 54h |  |  |
| 104 | 3.2.7.1 | Portada | manual | 4.88d | 2024-05-07 | 2024-05-10 |  |  |  |  | Claudia Reyes | 38h |  |  |  |
| 105 | 3.2.7.2 | Carpeta | manual | 4.88d | 2024-05-07 A | 2024-05-10 A | 100% |  |  |  | Claudia Reyes | 38h | 38h |  |  |
| 106 | 3.2.8 | **Carpeta de limpieza (checkup)** |  | 4d | 2024-05-07 A | 2024-05-10 | 50% | 2d | 0d |  | Claudia Reyes | 108h | 54h |  |  |
| 107 | 3.2.8.1 | Portada | manual | 4.88d | 2024-05-07 | 2024-05-10 |  |  |  |  | Claudia Reyes | 38h |  |  |  |
| 108 | 3.2.8.2 | Carpeta | manual | 4.88d | 2024-05-07 A | 2024-05-10 A | 100% |  |  |  | Claudia Reyes | 38h | 38h |  |  |
| 109 | 3.2.9 | NUevo sanitario |  | 6d | 2024-04-05 A | 2024-04-15 | 5% | 5.7d | 102.5d | finish no earlier than 2024-04-15 | Claudia Reyes | 48h | 2.4h |  |  |
| 110 | 3.2.10 | DOC-GEN-05 Protocolo de limpieza | manual | 5.25d | 2024-04-08 A | 2024-04-12 | 5% | 4.99d |  |  | Claudia Reyes | 41h | 2.1h |  |  |
| 111 | 3.2.11 | Calendario de actividades | manual | 5.25d | 2024-04-08 A | 2024-04-12 | 95% | 0.26d |  |  | Claudia Reyes; Javier pradel | 43.1h | 38.9h |  |  |
| 112 | 3.2.12 | **Equipo para RPBI** |  | 5.25d | 2024-04-08 A | 2024-04-12 |  | 5.25d |  |  | Claudia Reyes; Nisa Alvalrez | 161.9h | 2.1h |  |  |
| 113 | 3.2.12.1 | Enviar email solicitando y recordando el requerimiento | manual | 5.25d | 2024-04-08 | 2024-04-12 |  |  |  |  | Claudia Reyes; Nisa Alvalrez | 82h |  |  |  |
| 114 | 3.3 | Portero automatico | manual | 5.25d | 2024-04-08 | 2024-04-12 |  |  |  |  | Claudia Reyes; Javier Carapia | 82h |  |  |  |
| 115 | 3.4 | Limpieza de mochilas de transporte de muestras | manual | 5.25d | 2024-04-08 | 2024-04-12 |  |  |  |  | Claudia Reyes; Javier Carapia | 82h |  |  |  |
| 116 | 6 | **6.4 Equipo** |  | 34d? | 2024-03-30 A | 2024-05-09 | 17% | 28.3d? | 81.5d |  | Claudia Reyes | 1477.48h | 253.71h | 1,733.06 | 290.35 |
| 117 | 2.1.2 | Mapa de procesos (DOC-CAL-01). |  | 1.65d | 2024-04-19 A | 2024-04-22 | 15% | 1.41d | 96.5d | finish no earlier than 2024-04-22 | Eloisa Flores; Nisa Alvalrez | 10.67h | 4.47h | 8 | 1.2 |
| 118 | 2.1.3.1 | Actualizar organigrama |  | 1.88d | 2024-04-12 A | 2024-04-15 A | 100% |  |  | finish no earlier than 2024-04-15 | Javier pradel [133.3%] | 10.67h | 10.67h | 8 | 8 |
| 119 | 2.1.3 | manual de organización (MAN-RRH-01). |  | 5.62d | 2024-04-23 A | 2024-04-30 | 50% | 2.81d | 89.5d | finish no earlier than 2024-04-30 | Javier pradel | 38h | 22.5h |  |  |
| 120 | 3.5 | **IQ** |  | 0d | 2024-05-09 A | 2024-05-09 |  | 0d | 81.5d |  |  |  |  | 8 | 7.6 |
| 121 | 2.1.4 | Aviso de COFEPRIS | milestone | 0d | 2024-05-09 A | 2024-05-09 | 95% | 0d | 81.5d | start no earlier than 2024-05-09 | Jazmin I. Carapia Valladares [133.3%] |  |  | 8 | 7.6 |
| 122 | 3.14 | Registro de Recepcion de muestras |  | 11d | 2024-04-01 A | 2024-04-12 | 30% | 7.7d | 103.5d | start no earlier than 2024-04-01 | Katya Atempa | 82.11h | 24.91h | 861.06 | 261.15 |
| 123 | 3.5.6 | Activar el modulo de gastos por sucursal | manual | 16d | 2024-04-01 A | 2024-04-18 | 5% | 15.2d |  |  | Javier pradel [105%] | 117.6h | 6.72h |  |  |
| 124 | 3.5.7 | Camaras de seguridad | manual | 3d | 2024-04-08 A | 2024-04-10 | 10% | 2.7d |  |  | Fernando Chavarria | 24h | 2.4h |  |  |
| 125 | 3.5.8 | Cursograma | manual | 6d | 2024-04-12 A | 2024-04-18 | 5% | 5.7d |  |  | Jose Carapia [133%] | 53.2h | 3.19h |  |  |
| 126 | 3.5.9 | Calibracion de centrifugas | manual | 1d | 2024-04-03 A | 2024-04-03 | 95% | 0.05d |  |  | Fernando Chavarria [133%] | 9.31h | 8.78h |  |  |
| 127 | 3.5.10 | Inventario de Equipos | manual | 1.88d | 2024-04-12 A | 2024-04-13 | 50% | 0.94d |  |  | Fernando Chavarria [133%] | 20h | 10h |  |  |
| 128 | 3.5.11 | Solicitar checadores | manual | 13d | 2024-04-13 A | 2024-04-27 | 10% | 11.7d |  |  | Fernando Chavarria | 96h | 10h |  |  |
| 129 | 3.5.12 | Identificación de equipos | manual | 1.88d | 2024-04-19 A | 2024-04-20 | 95% | 0.09d |  |  | Fernando Chavarria [133%] | 20h | 19h |  |  |
| 130 | 3.5.13 | Registro de certificados de calibracion | manual | 1.88d | 2024-04-12 A | 2024-04-13 | 95% | 0.09d |  |  | Fernando Chavarria [133%] | 20h | 19h |  |  |
| 131 | 3.5.14 | Calibración de equipos termohigrometros | manual | 13d | 2024-04-08 A | 2024-04-22 | 25% | 9.75d |  |  | Fernando Chavarria [113%] | 99.44h | 29.38h |  |  |
| 132 | 3.5.15 | Registro de equipos nuevos (abbott) | manual | 4d | 2024-04-09 | 2024-04-12 |  |  |  |  | Fernando Chavarria [102%] | 32.64h |  |  |  |
| 133 | 3.5.16 | Abbott, impresora | manual | 6d | 2024-04-08 | 2024-04-13 |  |  |  |  | Fernando Chavarria [105%] | 50.4h |  |  |  |
| 134 | 3.5.17 | Abbott, registro de formatos de acreditacon | manual | 6d | 2024-04-08 | 2024-04-13 |  |  |  |  | Fernando Chavarria [105%] | 50.4h |  |  |  |
| 135 | 3.5.18 | Abbott, documentacion | manual | 6d | 2024-04-08 | 2024-04-13 |  |  |  |  | Fernando Chavarria [105%] | 50.4h |  |  |  |
| 136 | 3.5.19 | Desocupar cuarto de desecho de impresoras | manual | 5d | 2024-04-15 A | 2024-04-19 A | 100% |  |  |  | Fernando Chavarria [105%] | 42h | 42h |  |  |
| 137 | 3.5.20 | Usuario de equipos para el CP | manual | 18d | 2024-03-30 A | 2024-04-19 | 5% | 17.1d |  |  | Javier pradel [102%] | 130.56h | 7.34h |  |  |
| 138 | 3.5.21 | Abbott, contactar al call center para el abbott link | manual | 5d | 2024-04-01 | 2024-04-05 |  |  |  |  | Fernando Chavarria [105%] | 42h |  |  |  |
| 139 | 3.5.22 | Abbott, conexion a internet | manual | 5d | 2024-04-01 | 2024-04-05 |  |  |  |  | Fernando Chavarria [105%] | 42h |  |  |  |
| 140 | 3.5.23 | Todas las PC el escritorio de acreditacion | manual | 5d | 2024-04-15 | 2024-04-19 |  |  |  |  | Javier pradel [105%]; Fernando Chavarria [105%] | 84h |  |  |  |
| 141 | 3.5.24 | Usuarios no compartidos | manual | 5d | 2024-04-15 | 2024-04-19 |  |  |  |  | Javier pradel [105%]; Fernando Chavarria [105%] | 84h |  |  |  |
| 142 | 3.5.25 | Compra de Termómetros / higrómetros | manual | 1d | 2024-04-01 | 2024-04-01 |  |  |  |  | Fernando Chavarria [133%] | 9.31h |  |  |  |
| 143 | 6.21 | Balanceo de cargas |  | 1d | 2024-04-03 A | 2024-04-03 | 80% | 0.2d | 111.5d | start no earlier than 2024-04-03 | Fernando Chavarria [133.3%] | 10.67h | 5.87h | 8 | 6.4 |
| 144 | 3.5.27 | FOR-EQU-08 Incidente por falla de equipo , se debe llenar por cada incidente de equipo | manual | 17.88d | 2024-04-08 A | 2024-04-26 | 15% | 15.19d |  |  | Fernando Chavarria | 126h | 22h |  |  |
| 145 | 6.6 | Calendario de mantenimiento preventivo |  | 6d? | 2024-04-23 A | 2024-04-30 | 15% | 5.1d? | 89.5d | finish no earlier than 2024-04-30 | Fernando Chavarria [105.3%] | 42.11h | 5.47h | 40 | 6 |
| 146 | 3.5.29 | Portero Automatico | manual | 10d | 2024-04-26 | 2024-05-07 |  |  |  |  | Angelito | 80h |  | 800 |  |

Notes:
- 122: responsable katya

| ID | WBS | Task | Type | Duration | Start | Finish | Predecessors | Complete | Remaining | Total slack | Free slack | Constraint | Resources | Work | Actual work | Cost | Actual cost |
| --- | --- | --- | --- | --- | --- | --- | --- | --- | --- | --- | --- | --- | --- | --- | --- | --- | --- |
| 147 | 5 | **6.8 Productos y servicios proporcionados externamente** |  | 88.88d | 2024-01-01 A | 2024-04-12 |  | 8% | 81.73d | 103.5d |  |  |  | 228.5h | 15.79h | 440 | 18 |
| 148 | 5.1 | asignación de la seccio "Product no conforme" |  | 5d | 2024-04-01 A | 2024-04-05 |  | 5% | 4.75d | 109.5d |  | start no earlier than 2024-04-01 | Jose Carapia [105.3%] | 42.11h | 1.05h | 40 | 2 |
| 149 | 4.1.5.2.4 | Falta exintor el de tomografia |  | 3d | 2024-04-01 | 2024-04-03 |  |  |  | 110.5d |  | start no earlier than 2024-04-01 | Javier Carapia [109.1%] | 26.18h |  | 24 |  |
| 150 | 5.2 | Registro de proveedores |  | 1d | 2024-04-05 | 2024-04-05 |  |  |  | 108.5d |  | start no earlier than 2024-04-05 | Jose Carapia [133.3%] | 10.67h |  | 8 |  |
| 151 | 5.3 | POT-COM-01 Evaluacion y seleccion de proveedores jpm v0 |  | 1d | 2024-04-05 | 2024-04-05 |  |  |  | 108.5d |  | start no earlier than 2024-04-05 | Jose Carapia [133.3%] | 10.67h |  | 8 |  |
| 152 | 5.4 | Difusión de los horarios de recepción de mercancía |  | 1d | 2024-04-01 | 2024-04-01 |  |  |  | 112.5d |  | start no earlier than 2024-04-01 | Jose Carapia [133.3%] | 10.67h |  | 8 |  |
| 153 | 5.5 | Ordenes de compra |  | 5d | 2024-04-01 A | 2024-04-05 |  | 40% | 3d | 109.5d |  | start no earlier than 2024-04-01 | Jose Carapia [105.3%] | 42.11h | 14.74h | 40 | 16 |
| 154 | 5.6 | Revison de minimos |  | 3d | 2024-04-10 | 2024-04-12 |  |  |  | 103.5d |  | start no earlier than 2024-04-10 | Jose Carapia [133.3%] | 10.67h |  | 8 |  |
| 155 | 4.1.5.5 | Lavavo de urologia |  | 3d | 2024-01-01 | 2024-01-04 |  |  |  | 189.38d |  |  | Angelito | 24h |  | 240 |  |
| 156 | 5.7 | Verificación del procedimiento POT-COM-02 Compras y abastecimiento |  | 3d | 2024-04-08 | 2024-04-10 |  |  |  | 104.5d |  | start no earlier than 2024-04-08 | Jose Carapia [105.3%] | 25.26h |  | 40 |  |
| 157 | 4.1.5.5.1 | Indicar que lo vacie en el area de limpieza |  | 3d | 2024-04-08 | 2024-04-10 |  |  |  | 104.5d |  | start no earlier than 2024-04-08 | Marisol Briseño [109.1%] | 26.18h |  | 24 |  |
| 158 | 4 | **7. Requisitos de proceso** |  | 34d | 2024-04-01 A | 2024-05-09 |  | 9% | 30.79d | 80.5d |  |  |  | 599.11h | 60.83h | 1,290 | 324.5 |
| 159 | 5.9 | Autorizacion de gastos de material, se propone que lo haga almacen |  | 5d | 2024-04-01 A | 2024-04-05 |  | 80% | 1d | 109.5d |  | start no earlier than 2024-04-01 | Jose Carapia [105.3%] | 42.11h | 31.58h | 40 | 32 |
| 160 | 4.2 | **7.2 Pre analitico** |  | 15d | 2024-04-23 A | 2024-05-09 |  | 14% | 12.93d | 72.5d |  |  |  | 203h | 29.25h | 1,250 | 292.5 |
| 161 | 4.2.1 | **Recepcion de muestras** |  | 15d | 2024-04-23 A | 2024-05-09 |  | 14% | 12.93d | 72.5d |  |  |  | 203h | 29.25h | 1,250 | 292.5 |
| 162 | 4.2.1.1 | Observaciones al POT-PRE-01 Recepcion de Muestras | manual | 5.62d | 2024-04-23 A | 2024-04-27 |  | 65% | 1.97d |  |  |  | Katya Atempa | 45h | 29.25h | 450 | 292.5 |
| 163 | 4.2.1.2 | Diagrama de proceso |  | 2d | 2024-04-29 | 2024-04-30 | 162 |  |  | 80.5d | 0d |  | Katya Atempa | 16h |  | 160 |  |
| 164 | 4.2.1.3 | CursoGrama | manual | 3d | 2024-05-01 | 2024-05-03 | 163 |  |  |  |  |  | Katya Atempa | 24h |  | 240 |  |
| 165 | 4.2.1.4 | AMEF | manual | 5d | 2024-05-04 | 2024-05-09 | 164 |  |  |  |  |  | Katya Atempa | 40h |  | 400 |  |
| 166 | 4.2.1.5 | Verifica la operación del area | manual | 10.88d | 2024-04-29 | 2024-05-09 |  |  |  |  |  |  | Javier pradel | 78h |  |  |  |
| 167 | 4.3 | **7.3 Analitico** |  | 26.38d | 2024-04-08 | 2024-05-08 |  |  |  | 0d |  |  |  | 354h |  |  |  |
| 168 | 4.3.1 | Comparativo de Lans (pruebas que se envian) | manual | 8d | 2024-04-30 | 2024-05-08 |  |  |  |  |  |  | Marisol Briseño | 56h |  |  |  |
| 169 | 4.3.2 | **Valores de referencia** |  | 11d | 2024-04-15 | 2024-04-26 |  |  |  | 0d |  |  |  | 172h |  |  |  |
| 170 | 4.3.2.1 | Actualizar valores en el SYSARCAWEB | manual | 11.88d | 2024-04-15 | 2024-04-26 |  |  |  |  |  |  | Marisol Briseño | 86h |  |  |  |
| 171 | 4.3.2.2 | Identificar y documentar su origen | manual | 11.88d | 2024-04-15 | 2024-04-26 |  |  |  |  |  |  | Marisol Briseño | 86h |  |  |  |
| 172 | 4.3.3 | Inventarios de POT,DOC,FOR de procesp | manual | 17.88d | 2024-04-08 | 2024-04-26 |  |  |  |  |  |  | Marisol Briseño | 126h |  |  |  |

| ID | WBS | Task | Type | Duration | Start | Finish | Complete | Remaining | Total slack | Constraint | Resources | Work | Actual work | Cost |
| --- | --- | --- | --- | --- | --- | --- | --- | --- | --- | --- | --- | --- | --- | --- |
| 173 | 5 | **8. Requistos del sistema de gestion** |  | 7.88d? | 2024-04-08 A | 2024-04-16 | 77% | 1.78d? | 100.5d |  |  | 168h | 137.09h |  |
| 174 | 5.1 | **8.6 Mejoramiento** |  | 7.88d? | 2024-04-08 A | 2024-04-16 | 77% | 1.78d? | 100.5d |  |  | 168h | 137.09h |  |
| 175 | 5.1.1 | QR a VM |  | 3d? | 2024-04-08 A | 2024-04-10 A | 100% |  |  | start no earlier than 2024-04-08 | Victoria Castaneda | 24h | 24h |  |
| 176 | 5.1.2 | Encuesata pacientes en word |  | 3d? | 2024-04-08 A | 2024-04-10 A | 100% |  |  | start no earlier than 2024-04-08 | Javier pradel | 24h | 24h |  |
| 177 | 5.1.3 | Guion para envio por email |  | 0.75d? | 2024-04-08 A | 2024-04-08 A | 100% |  |  | start no earlier than 2024-04-08 | Victoria Castaneda | 8h | 8h |  |
| 178 | 5.1.4 | Encuesta para call center |  | 5d? | 2024-04-08 A | 2024-04-12 A | 100% |  |  | start no earlier than 2024-04-08 | Victoria Castaneda | 40h | 40h |  |
| 179 | 5.1.5 | Tablet para recepcin instalarla |  | 4d? | 2024-04-08 A | 2024-04-11 | 5% | 3.8d? | 104.5d | start no earlier than 2024-04-08 | Victoria Castaneda | 32h | 1.6h |  |
| 180 | 5.1.6 | **Pendientes de Ubicar** |  | 3.88d? | 2024-04-12 A | 2024-04-16 | 85% | 0.58d? | 100.5d |  |  | 40h | 39.49h |  |
| 181 | 5.1.6.1 | Gafetes para mensajeros |  | 3d? | 2024-04-12 A | 2024-04-16 | 85% | 0.45d? | 100.5d | start no earlier than 2024-04-12 | Eloisa Flores; Nisa Alvalrez; Ismael Rincon | 40h | 39.49h |  |
| 182 | 7 | **SYSARCAWEB** |  | 40.88d? | 2024-04-01 | 2024-05-17 |  |  | 5.88d |  |  | 1060.11h |  | 440 |
| 183 | 6.1 | Hacer Check-in en la recepcion de mustras por sucursal |  | 5d | 2024-04-16 | 2024-04-20 |  |  | 96.5d | start no earlier than 2024-04-16 | Katya Atempa | 40h |  | 400 |
| 184 | 6.2 | Modulo de recueros humanos para sucursales |  | 5d | 2024-04-22 | 2024-04-26 |  |  | 90.38d | start no earlier than 2024-04-22 | Javier pradel | 40h |  |  |
| 185 | 6.3 | Asifnar usuario de RHH a Nisa |  | 16d | 2024-04-08 | 2024-04-29 |  |  | 88.38d | start no earlier than 2024-04-08 | Javier pradel | 128h |  |  |
| 186 | 6.4 | Checkin de envio por la sucursal |  | 21d | 2024-04-01 | 2024-04-29 |  |  | 88.38d | start no earlier than 2024-04-01 | Javier pradel | 168h |  |  |
| 187 | 6.5 | Agendas en PDF por servicio |  | 16d | 2024-04-08 | 2024-04-29 |  |  | 88.38d | start no earlier than 2024-04-08 | Javier pradel | 128h |  |  |
| 188 | 6.6 | Reporte de pagos al USG |  | 16d? | 2024-04-08 | 2024-04-29 |  |  | 88.38d | start no earlier than 2024-04-08 | Javier pradel | 128h |  |  |
| 189 | 6.7 | Registro de USG no se mustran los folios |  | 11d? | 2024-04-15 | 2024-04-29 |  |  | 88.38d | start no earlier than 2024-04-15 | Javier pradel | 88h |  |  |
| 190 | 6.4 | Mantenimiento Correctivo |  | 6d | 2024-04-23 | 2024-04-30 |  |  | 89.5d | finish no earlier than 2024-04-30 | Fernando Chavarria [105.3%] | 42.11h |  | 40 |
| 191 | 6.9 | cuando hay una nota de musytra dañana pero se acepta, se llena una nota, y se mustra en proceso | manual | 19.62d | 2024-04-08 | 2024-04-30 |  |  |  |  | Javier pradel | 134h |  |  |
| 192 | 6.10 | Ajustes a lso cortes, según lo acordado con IR y EF | manual | 6.88d | 2024-04-23 | 2024-04-29 |  |  |  |  | Javier pradel | 46h |  |  |
| 193 | 6.11 | Modulo de log de la OT | manual | 16.88d | 2024-04-30 | 2024-05-17 |  |  |  |  | Javier pradel | 118h |  |  |
| 194 | 6.12 | En el modulo de mejora, cuando seleccionen que no se modifica documento quitar el cuadro de abajao | manual | 1d? | 2024-04-01 | 2024-04-02 |  |  |  |  |  |  |  |  |
| 195 | 6.13 | segunda parte del mejora continua | manual | 1d? | 2024-04-01 | 2024-04-02 |  |  |  |  |  |  |  |  |
| 196 | 7 | **BUGS SYSARCAWEB** |  | 25d | 2024-04-08 A | 2024-05-06 | 13% | 21.81d | 0d |  |  | 798h | 138h |  |
| 197 | 7.1 | Modulo de USG, no muestra pacientes | manual | 9.88d | 2024-04-22 A | 2024-05-01 A | 100% |  |  |  | Eloisa Flores; Javier pradel | 138h | 138h |  |
| 198 | 7.2 | Encuesta de pacientes | manual | 17.88d | 2024-04-08 | 2024-04-26 |  |  |  |  | Victoria Castaneda | 126h |  |  |
| 199 | 7.3 | Encuesta Medico | manual | 17.88d | 2024-04-08 | 2024-04-26 |  |  |  |  | Victoria Castaneda | 126h |  |  |
| 200 | 7.4 | Encuesta Call center | manual | 17.88d | 2024-04-08 | 2024-04-26 |  |  |  |  | Victoria Castaneda | 126h |  |  |
| 201 | 7.5 | Citas de estudios | manual | 13.88d | 2024-04-22 | 2024-05-06 |  |  |  |  | Eloisa Flores; Ismael Rincon; Victoria Castaneda | 282h |  |  |

Notes:
- 179: Ismael la debe solictar por email
- 188: se paga el 50% del USG de placas es 20%

| ID | WBS | Task | Type | Duration | Start | Finish | Total slack | Resources | Work |
| --- | --- | --- | --- | --- | --- | --- | --- | --- | --- |
| 202 | 8 | **Pendientes DG** |  | 5.38d | 2024-05-07 | 2024-05-13 | 0d | Javier Carapia | 332h |
| 203 | 8.1 | Fumigar pisos | manual | 4.88d | 2024-05-07 | 2024-05-10 |  | Javier Carapia; Claudia Reyes | 76h |
| 204 | 8.2 | Acuse de recibido de whatsapp | manual | 5d | 2024-05-08 | 2024-05-13 |  | Fernando Chavarria | 32h |
| 205 | 8.3 | Compra del agua potable | manual | 4.88d | 2024-05-07 | 2024-05-10 |  | Javier Carapia | 38h |
| 206 | 8.4 | Permiso de fernando Chavarria | manual | 4.88d | 2024-05-07 | 2024-05-10 |  | Javier Carapia | 38h |
| 207 | 8.5 | Ing. Del equipo de electrolitos | manual | 4.88d | 2024-05-07 | 2024-05-10 |  | Javier Carapia | 38h |
| 208 | 8.6 | El agua, solo un vaso o un conoi | manual | 4.88d | 2024-05-07 | 2024-05-10 |  | Javier Carapia | 38h |
| 209 | 8.7 | Compra del agua | manual | 4.88d | 2024-05-07 | 2024-05-10 |  | Javier Carapia | 38h |
