# ARCA -SGC

Schedule from MS Project, 2024-01-01 to 2027-04-26, costs in $, A marks actual dates.

## Calendars

- calendario ARCA: Mon-Sat 08:00-12:00, 13:00-17:00; Sun off.

## Resources

| Resource | Group | Notes |
| --- | --- | --- |
| No Asignado |  |  |
| Javier pradel |  |  |
| Daniela M. Olivares Muñiz |  |  |
| Eloisa Flores | Servicios Administrativos |  |
| Ismael Rincon |  |  |
| Visitaduria Medica |  |  |
| todos |  |  |
| Jazmin I. Carapia Valladares |  |  |
| Marisol Briseño |  |  |
| Javier Carapia |  |  |
| Claudia Reyes |  |  |
| Fernando Chavarria |  |  |
| Victor Baltazar |  |  |
| Jose Carapia |  |  |
| Nisa Alvalrez |  | 22abr24 solo pidio cubrebocas, se le comento que hiciera el vale copleto |
| Servicios Administrativos |  |  |
| Leidy |  |  |
| Manuel |  |  |
| Gustavo |  |  |
| Victoria Castaneda |  |  |
| Sistemas |  |  |
| Fernando Chavarria |  |  |

## Schedule

| ID | WBS | Task | Type | Duration | Start | Finish | Complete | Remaining | Total slack | Constraint | Resources | Work | Actual work | Cost | Actual cost |
| --- | --- | --- | --- | --- | --- | --- | --- | --- | --- | --- | --- | --- | --- | --- | --- |
| 1 | 1 | **4. Requisitos Generales** |  | 103.88d? | 2024-01-01 A | 2024-04-30 | 4% | 99.78d? | 935d |  |  | 588.18h | 40.84h | 168 | 64 |
| 2 | 1.1 | **4.1 Imparcialidad** |  | 86d? | 2024-01-01 A | 2024-04-10 | 56% | 38.22d? | 952.88d |  |  | 54.84h | 40.84h | 72 | 64 |
| 3 | 1.1.1 | política de imparcialidad, FOR-RRH-36 |  | 1d | 2024-01-01 A | 2024-01-02 A | 100% |  |  |  |  |  |  |  |  |
| 4 | 1.1.1.1 | **Firma de personal activo** |  | 1d? | 2024-04-08 | 2024-04-08 |  |  | 954d | start no earlier than 2024-04-05 | Eloisa Flores [133.3%] | 14h |  | 8 |  |
| 5 | 1.1.2.1 | **Perfil de puestos** |  | 1d? | 2024-04-08 | 2024-04-08 |  |  | 954d |  |  | 6h |  |  |  |
| 6 | 1.1.2.1.1 | **Pendientes** |  | 1d? | 2024-04-08 | 2024-04-08 |  |  | 954d | start no earlier than 2024-04-08 | Nisa Alvalrez | 6h |  |  |  |
| 7 | 1.1.2.1.1.1 | PLan de induccion |  | 1d? | 2024-04-08 | 2024-04-08 |  |  | 954d |  |  |  |  |  |  |
| 8 | 1.1.2.1.1.2 | Asignacion de tareas |  | 1d? | 2024-04-08 | 2024-04-08 |  |  | 954d |  |  |  |  |  |  |
| 9 | 1.1.2.1.1.3 | Nombramientos |  | 1d? | 2024-04-08 | 2024-04-08 |  |  | 954d |  |  |  |  |  |  |
| 10 | 1.1.2.2 | **Firmas digitales** |  | 1d? | 2024-04-08 | 2024-04-08 |  |  | 954d | start no earlier than 2024-04-08 |  |  |  |  |  |
| 11 | 1.1.2.2.1 | Evluaciones |  | 1d? | 2024-04-08 | 2024-04-08 |  |  | 954d |  |  |  |  |  |  |
| 12 | 6.5 | Retiro de equipos |  | 2d | 2024-04-08 A | 2024-04-10 A | 100% |  |  | start no earlier than 2024-04-01 | Fernando Chavarria [105.3%] | 16.84h | 16.84h | 40 | 40 |
| 13 | 1.1.2 | **código de ética, FOR-RRH-04** |  | 2d | 2024-04-08 A | 2024-04-10 A | 100% |  |  |  | Eloisa Flores [133.3%] | 24h | 24h | 24 | 24 |
| 14 | 5.10 | **AMEF** |  | 2d | 2024-04-08 A | 2024-04-10 A | 100% |  |  |  |  | 16h | 16h | 16 | 16 |
| 15 | 1.1.3 | compromiso de confidencialidad, FOR-RRH03) |  | 1d | 2024-04-08 A | 2024-04-09 A | 100% |  |  | start no earlier than 2024-04-08 | Eloisa Flores [133.3%] | 8h | 8h | 8 | 8 |
| 16 | 1.1.4 | declaración de conflicto de interés (FOR-RRH-05). |  | 1d | 2024-04-09 A | 2024-04-10 A | 100% |  |  | start no earlier than 2024-04-09 | Eloisa Flores [133.3%] | 8h | 8h | 8 | 8 |
| 17 | 1.2 | **4.2 Confidencialidad** |  | 8d | 2024-04-08 | 2024-04-16 |  |  | 946.12d |  |  | 72h |  | 8 |  |
| 18 | 1.2.1 | Contrato de confidencialidad para entidades externa |  | 8d | 2024-04-08 | 2024-04-16 |  |  | 946.12d | start no earlier than 2024-04-08 | Eloisa Flores [133.3%] | 72h |  | 8 |  |
| 19 | 1.3 | **4.3 Requisitos relativos a los pacientes** |  | 103.88d? | 2024-01-01 | 2024-04-30 |  |  | 935d |  |  | 461.33h |  | 88 |  |
| 20 | 1.3.1 | **derechos y deberes de los pacientes (DOC-GEN-02)** |  | 5d | 2024-04-08 | 2024-04-12 |  |  | 949.12d |  | Ismael Rincon | 122.67h |  | 16 |  |
| 21 | 1.3.1.1 | Marketing digital |  | 5d | 2024-04-08 | 2024-04-12 |  |  | 949.12d | start no earlier than 2024-04-08 | Ismael Rincon [133.3%] | 53.33h |  | 8 |  |
| 22 | 1.3.1.2 | Impreta |  | 5d | 2024-04-08 | 2024-04-12 |  |  | 949.12d | start no earlier than 2024-04-08 | Ismael Rincon [133.3%] | 53.33h |  | 8 |  |
| 23 | 1.3.2 | **procedimiento de atención a pacientes (POT-REC-01)** |  | 6.12d? | 2024-04-12 | 2024-04-19 |  |  | 944.88d | start no earlier than 2024-04-12 | Ismael Rincon [133.3%] | 8h |  | 8 |  |
| 24 | 1.3.2.1 | Capacitacion al procedmiento parte 1 | milestone | 0d? | 2024-04-12 | 2024-04-12 |  |  | 951d | start no earlier than 2024-04-12 | Javier pradel |  |  |  |  |
| 25 | 1.3.2.2 | Capacitacion al procedimiento parte 2 |  | 0.88d? | 2024-04-18 | 2024-04-19 |  |  | 944.88d | start no earlier than 2024-04-18 |  |  |  |  |  |
| 26 | 1.3.3 | catalogo de servicios (FOR-VEN-03) |  | 1d | 2024-04-19 | 2024-04-19 |  |  | 944d | start no earlier than 2024-04-19 | Visitaduria Medica [133.3%] | 10.67h |  | 8 |  |

Notes:
- 6: hostter intendencia mensajeria CA tecnica de equios BIomedicos CA Tecnica Auxiliar de laboratorio

| ID | WBS | Task | Type | Duration | Start | Finish | Total slack | Constraint | Resources | Work | Cost |
| --- | --- | --- | --- | --- | --- | --- | --- | --- | --- | --- | --- |
| 27 | 1.3.4 | **revisión mensual de los indicadores de desempeño analítico (FOR-CAL-04)** |  | 15d? | 2024-04-08 | 2024-04-25 | 940d |  |  | 40h | 24 |
| 28 | 1.3.4.1 | PNC Preexamen |  | 1d | 2024-04-23 | 2024-04-23 | 941d | start no earlier than 2024-04-23 | Ismael Rincon [133.3%] | 10.67h | 8 |
| 29 | 1.3.4.2 | Tiempo de espera |  | 3d | 2024-04-08 | 2024-04-10 | 951.12d | start no earlier than 2024-04-08 | Ismael Rincon [133.3%] | 29.33h | 8 |
| 30 | 1.3.4.3 | **Entrega Oportuna** |  | 0d? | 2024-04-25 | 2024-04-25 | 940d | start no earlier than 2024-04-25 | Ismael Rincon [133.3%] |  | 8 |
| 31 | 1.3.4.3.1 | Lista de estudios fuera del sistema | milestone | 0d? | 2024-04-25 | 2024-04-25 | 940d | start no earlier than 2024-04-08 |  |  |  |
| 32 | 1.3.5 | actividades no conformidades y acciones no correctivas. (FOR-CAL-09) |  | 1d | 2024-04-26 | 2024-04-26 | 938d | start no earlier than 2024-04-26 | Ismael Rincon [133.3%] | 10.67h | 8 |
| 33 | 1.3.6 | **Manual para la toma, identificación, manejo, conservación y transporte de muestras (MAN-PRE-01)** |  | 0d? | 2024-04-27 | 2024-04-27 | 938d | start no earlier than 2024-04-27 | Ismael Rincon |  | 8 |
| 34 | 1.3.6.1 | Mochilas de transporte | milestone | 0d? | 2024-04-27 | 2024-04-27 | 938d | start no earlier than 2024-04-08 |  |  |  |
| 35 | 1.3.6.2 | Termometro | milestone | 0d? | 2024-04-27 | 2024-04-27 | 938d | start no earlier than 2024-04-08 |  |  |  |
| 36 | 1.3.7 | OC-GEN-01 Plan de contingencia_jpm.docx |  | 7d? | 2024-04-08 | 2024-04-16 | 946d | start no earlier than 2024-04-08 | Ismael Rincon | 56h |  |
| 37 | 1.3.8 | Capacitacion Holter, Map |  | 1d? | 2024-04-19 | 2024-04-19 | 944d | start no earlier than 2024-04-19 | Marisol Briseño; Nisa Alvalrez; Ismael Rincon | 18h |  |
| 38 | 1.3.9 | Bata Azul |  | 5d? | 2024-04-08 | 2024-04-12 | 949d | start no earlier than 2024-04-08 | Ismael Rincon | 40h |  |
| 39 | 1.3.10 | nstructivos de orina |  | 5d? | 2024-04-08 | 2024-04-12 | 949d | start no earlier than 2024-04-08 | Ismael Rincon | 40h |  |
| 40 | 1.3.11 | Eses fecales |  | 4d? | 2024-04-08 | 2024-04-11 | 950d | start no earlier than 2024-04-08 | Ismael Rincon | 30h |  |
| 41 | 1.3.12 | Solicitar bolsas RPBI para el mensajero |  | 5d? | 2024-04-08 | 2024-04-12 | 949d | start no earlier than 2024-04-08 | Ismael Rincon | 40h |  |
| 42 | 1.3.13 | Telefono para el mensajero |  | 2d? | 2024-04-08 | 2024-04-09 | 952d | start no earlier than 2024-04-08 | Jazmin I. Carapia Valladares; Ismael Rincon | 24h |  |
| 43 | 1.3.7 | control de registro (PRO-CAL-03) |  | 1d | 2024-04-29 | 2024-04-29 | 936d | start no earlier than 2024-04-29 | Ismael Rincon [133.3%] | 10.67h | 8 |
| 44 | 1.4 | Actualización de Insumos por estudio |  | 1d? | 2024-04-30 | 2024-04-30 | 935d | start no earlier than 2024-04-30 | Daniela M. Olivares Muñiz [133.3%] | 10.67h | 8 |
| 45 | 1.3.16 | **Solicitud de plantillas** |  | 100.88d? | 2024-01-01 | 2024-04-26 | 938d |  |  |  |  |
| 46 | 1.3.16.1 | ENDOSCOPIA Y COLONOSCOPIA |  | 13d? | 2024-04-12 | 2024-04-26 | 938d | start no earlier than 2024-04-12 |  |  |  |
| 47 | 1.3.16.2 | PLATILLA DE RM |  | 13d? | 2024-04-12 | 2024-04-26 | 938d | start no earlier than 2024-04-12 |  |  |  |
| 48 | 1.3.16.3 | MASTOGRAFIA |  | 13d? | 2024-04-12 | 2024-04-26 | 938d | start no earlier than 2024-04-12 |  |  |  |
| 49 | 1.3.16.4 | ELECTROENCEFALOGRAMA |  | 23d? | 2024-01-01 | 2024-01-27 | 1015.88d |  |  |  |  |
| 50 | 2 | **5. Requisitos estructurales y de gobernanza** |  | 0d | 2024-05-03 | 2024-05-03 | 933d |  |  |  | 8 |
| 51 | 2.1 | **5.1 Entidad Legal** |  | 0d | 2024-05-03 | 2024-05-03 | 933d |  |  |  | 8 |
| 52 | 2.1.1 | Descripción de puestos | milestone | 0d | 2024-05-03 | 2024-05-03 | 933d | start no earlier than 2024-05-03 | Eloisa Flores [133.3%] |  | 8 |

Notes:
- 37: viernes, 19, la hora esta por dsfinirse

| ID | WBS | Task | Type | Duration | Start | Finish | Complete | Remaining | Total slack | Constraint | Resources | Work | Actual work | Cost | Actual cost |
| --- | --- | --- | --- | --- | --- | --- | --- | --- | --- | --- | --- | --- | --- | --- | --- |
| 53 | 3 | **6. Requerimientos de recursos** |  | 94.88d? | 2024-01-01 | 2024-04-19 |  |  | 944d |  |  | 37h |  |  |  |
| 54 | 3.1 | **6.2 Personal** |  | 94.88d? | 2024-01-01 | 2024-04-19 |  |  | 944d |  |  | 37h |  |  |  |
| 55 | 3.1.1 | **Integracion del expediente** |  | 94.88d? | 2024-01-01 | 2024-04-19 |  |  | 944d |  |  | 29h |  |  |  |
| 56 | 3.1.1.1 | **Evaluaciones** |  | 2.75d? | 2024-04-17 | 2024-04-19 |  |  | 943d |  |  | 21h |  |  |  |
| 57 | 3.1.1.1.1 | Reunion |  | 2.88d? | 2024-04-17 | 2024-04-19 |  |  | 943d | start no earlier than 2024-04-17 | Eloisa Flores | 21h |  |  |  |
| 58 | 3.1.1.2 | **Documentos** |  | 0.88d? | 2024-01-01 | 2024-01-01 |  |  | 1038d |  |  | 8h |  |  |  |
| 59 | 3.1.1.2.1 | Miguel Angel Flores Hernandez |  | 1d? | 2024-01-01 | 2024-01-01 |  |  | 1038d |  | Eloisa Flores | 8h |  |  |  |
| 60 | 3.1.2 | QUick del acceso a expedientes |  | 1d? | 2024-04-18 | 2024-04-18 |  |  | 945d | start no earlier than 2024-04-18 | Nisa Alvalrez | 8h |  |  |  |
| 61 | 6 | **6.4 Equipo** |  | 38d | 2024-04-01 | 2024-05-14 |  |  | 923d |  |  | 150.95h |  | 104 |  |
| 62 | 2.1.2 | **Mapa de procesos (DOC-CAL-01).** |  | 1d | 2024-05-08 | 2024-05-08 |  |  | 928d | start no earlier than 2024-05-06 | Eloisa Flores [133.3%] | 21.33h |  | 16 |  |
| 63 | 2.1.3.1 | Actualizar organigrama |  | 1d | 2024-05-08 | 2024-05-08 |  |  | 928d | start no earlier than 2024-05-08 | Javier pradel [133.3%] | 10.67h |  | 8 |  |
| 64 | 2.1.3 | manual de organización (MAN-RRH-01). |  | 5d | 2024-04-08 | 2024-04-12 |  |  | 950d | start no earlier than 2024-04-08 |  |  |  |  |  |
| 65 | 3.5 | **IQ** |  | 0d | 2024-05-09 | 2024-05-09 |  |  | 928d |  |  |  |  | 8 |  |
| 66 | 2.1.4 | Aviso de COFEPRIS | milestone | 0d | 2024-05-09 | 2024-05-09 |  |  | 928d | start no earlier than 2024-05-09 | Jazmin I. Carapia Valladares [133.3%] |  |  | 8 |  |
| 67 | 3.14 | Registro de Recepcion de muestras |  | 11d | 2024-04-01 | 2024-04-12 |  |  | 949.12d | start no earlier than 2024-04-01 | Marisol Briseño [105.3%] | 82.11h |  | 40 |  |
| 68 | 2.2 | **5.5 Objetivos y politicas** |  | 38d | 2024-04-01 | 2024-05-14 |  |  | 923d |  |  | 47.52h |  | 40 |  |
| 69 | 4.1.5.2.2 | Puerta de emergencia de proceso (quimico) jun.2023 |  | 3d | 2024-04-01 | 2024-04-03 |  |  | 957.12d | start no earlier than 2024-04-01 | Javier Carapia [109.1%] | 26.18h |  | 24 |  |
| 70 | 2.2.1 | Lista maestra de indicadores FOR-CAL-04) |  | 1d | 2024-05-13 | 2024-05-13 |  |  | 924d | start no earlier than 2024-05-13 | Javier pradel [133.3%] | 10.67h |  | 8 |  |
| 71 | 2.2.2 | Plan de mejora (FOR-CAL-15) |  | 1d | 2024-05-14 | 2024-05-14 |  |  | 923d | start no earlier than 2024-05-14 | todos [133.3%] | 10.67h |  | 8 |  |
| 72 | 3 | **7. Requisitos de proceso** |  | 961d | 2024-04-01 A | 2027-04-26 | 1% | 952.93d | 0d |  |  | 4371.99h | 42.11h | 4,352 | 40 |
| 73 | 3.1 | **7.3.5 Intervalos de referencia biológicos y límites de decisión clínica** |  | 21d | 2024-04-01 | 2024-04-24 |  |  | 940d |  |  | 190.71h |  | 232 |  |
| 74 | 3.1.1 | verifiar los puntos de referencia con el sistema |  | 5d | 2024-04-08 | 2024-04-12 |  |  | 949.12d | start no earlier than 2024-04-08 | Marisol Briseño [105.3%] | 42.11h |  | 40 |  |
| 75 | 5.10.2 | Diagrama de flujo |  | 6d | 2024-04-18 | 2024-04-24 |  |  | 940d | start no earlier than 2024-04-18 | Jose Carapia [133.3%] | 53.33h |  | 40 |  |
| 76 | 3.1.2 | prueba con 10 individuos con l glucosa o QS6 |  | 5d | 2024-04-08 | 2024-04-12 |  |  | 949.12d | start no earlier than 2024-04-08 | Marisol Briseño [106.7%] | 40.53h |  | 32 |  |
| 77 | 3.1.4 | Los intervalos de referencia biológicos y los limites de decisión clínica se deben revisar cada 3 años |  | 5d | 2024-04-01 | 2024-04-05 |  |  | 955.12d | start no earlier than 2024-04-01 | Marisol Briseño [105.3%] | 42.11h |  | 40 |  |

Notes:
- 57: Evalauciones FOR-RHH-11, FOR-RHH-12 y FOR-RHH-16 perfil de puestos
- 67: responsable katya
- 74: echo 40% pendientes 60%
- 77: cuando se lleva a cabo la revision de los procedimientos técnicos o antes en caso de que haya un cambio de meto o marca de reactivo o bien cuando haya un cambio de laboratorio subcontratado/subrrogado

| ID | WBS | Task | Duration | Start | Finish | Complete | Remaining | Total slack | Constraint | Resources | Work | Actual work | Cost | Actual cost |
| --- | --- | --- | --- | --- | --- | --- | --- | --- | --- | --- | --- | --- | --- | --- |
| 78 | 3.1.5 | **mensualente actualizan** | 1d | 2024-04-16 | 2024-04-16 |  |  | 947d |  |  | 12.63h |  | 80 |  |
| 79 | 3.1.5.1 | Desempeño Control de Calidad Interno (FOR-CCI-10) | 1d | 2024-04-16 | 2024-04-16 |  |  | 947d | start no earlier than 2024-04-16 | Marisol Briseño [105.3%] | 6.32h |  | 40 |  |
| 80 | 3.1.5.2 | Gráficos desempeñó PEEC (FOR-EEC-01) | 1d | 2024-04-16 | 2024-04-16 |  |  | 947d | start no earlier than 2024-04-16 | Marisol Briseño [105.3%] | 6.32h |  | 40 |  |
| 81 | 3.2 | **7.3.7.1 Generalidades** | 11d | 2024-04-24 | 2024-05-06 |  |  | 930d |  |  | 95.44h |  | 80 |  |
| 82 | 3.2.1 | incluir el nuevo equipo de abbott | 6d | 2024-04-24 | 2024-04-30 |  |  | 935d | start no earlier than 2024-04-24 | Marisol Briseño [133.3%] | 53.33h |  | 40 |  |
| 83 | 3.2.2 | Calidad interna, modificar | 6d | 2024-04-30 | 2024-05-06 |  |  | 930d | start no earlier than 2024-04-30 | Marisol Briseño [105.3%] | 42.11h |  | 40 |  |
| 84 | 3.3 | 7.3.7 Aseguramiento de la validez de los resultados del análisis | 6d | 2024-05-07 | 2024-05-13 |  |  | 924d | start no earlier than 2024-05-07 | Marisol Briseño [105.3%] | 42.11h |  | 40 |  |
| 85 | 3.4 | **Pendientes de ubicar** | 961d | 2024-04-01 A | 2027-04-26 | 2% | 943.14d | 0d |  |  | 1875.25h | 42.11h | 2,048 | 40 |
| 86 | 3.4.1 | Solicitar capacitacion al proveedor del equipo de URO | 36d | 2026-09-29 | 2026-11-09 |  |  | 144d | start no earlier than 2026-09-29 | Marisol Briseño | 240h |  | 240 |  |
| 87 | 3.4.2 | De URO iraema a carlos toribio | 36d | 2026-09-29 | 2026-11-09 |  |  | 144d | start no earlier than 2026-09-29 | Marisol Briseño | 240h |  | 240 |  |
| 88 | 3.4.3 | Capacitacion de RPBI | 4d | 2024-04-08 | 2024-04-11 |  |  | 950.12d | start no earlier than 2024-04-08 | Jazmin I. Carapia Valladares [50%]; Nisa Alvalrez [50%] | 30h |  | 240 |  |
| 89 | 3.4.4 | Constancias de Abbott | 5d | 2024-04-01 | 2024-04-05 |  |  | 955.12d | start no earlier than 2024-04-01 | Marisol Briseño [105.3%] | 42.11h |  | 40 |  |
| 90 | 3.4.5 | Constancias de Glico de david a alexis | 5d | 2024-04-01 A | 2024-04-06 A | 100% |  |  | start no earlier than 2024-04-01 | Marisol Briseño [105.3%] | 42.11h | 42.11h | 40 | 40 |
| 91 | 3.4.6 | **Subir los insertos de cada equipo** | 5d | 2024-04-08 | 2024-04-12 |  |  | 949.12d |  |  | 126.32h |  | 120 |  |
| 92 | 3.4.6.1 | Digitalizar insertos | 5d | 2024-04-08 | 2024-04-12 |  |  | 949.12d | start no earlier than 2024-04-08 | Marisol Briseño [105.3%] | 42.11h |  | 40 |  |
| 93 | 3.4.6.2 | Inventario de insertos para dar clave | 5d | 2024-04-08 | 2024-04-12 |  |  | 949.12d | start no earlier than 2024-04-08 | Marisol Briseño [105.3%] | 42.11h |  | 40 |  |
| 94 | 3.4.6.3 | Subirlos a cada equio | 5d | 2024-04-08 | 2024-04-12 |  |  | 949.12d | start no earlier than 2024-04-08 | Marisol Briseño [105.3%] | 42.11h |  | 40 |  |
| 95 | 3.4.7 | Constancia de hemato a frank a david y alexis e irasema | 36d | 2026-09-29 | 2026-11-09 |  |  | 144d | start no earlier than 2026-09-29 | Marisol Briseño | 240h |  | 240 |  |
| 96 | 3.1.3 | en el infore de resultado, colocar la leyenda de cambio de referencia o una carta al medico | 6d | 2024-04-12 | 2024-04-18 |  |  | 945d | start no earlier than 2024-04-12 | Marisol Briseño [133.3%] | 53.33h |  | 40 |  |
| 97 | 3.4.10 | Resguardo de resultados de referenciaa | 36d | 2026-09-29 | 2026-11-09 |  |  | 144d | start no earlier than 2026-09-29 | Marisol Briseño | 240h |  | 240 |  |
| 98 | 3.4.8 | Plan de capacitación 2024 y 2023 | 13d | 2024-04-01 | 2024-04-15 |  |  | 948d | start no earlier than 2024-04-01 | Marisol Briseño [112.8%] | 99.28h |  | 88 |  |
| 99 | 3.5.1 | Recepcion de mustras | 36d | 2026-11-10 | 2026-12-21 |  |  | 108d | start no earlier than 2026-11-10 | Marisol Briseño | 240h |  | 240 |  |
| 100 | 3.4.9 | Registro de calibraciones en cada equipo | 5d | 2024-04-01 | 2024-04-05 |  |  | 955.12d | start no earlier than 2024-04-01 | Marisol Briseño [105.3%] | 42.11h |  | 40 |  |
| 101 | 3.5.4 | validacion de resultados | 36d | 2027-03-16 | 2027-04-26 |  |  | 0d | start no earlier than 2027-03-16 | Marisol Briseño | 240h |  | 240 |  |

Notes:
- 88: Indagar por parte de Nisa horario y fecha, para elaborar la convocatorio
- 96: Al momento de que se detecta el cambio de valores se genera la leyenda en el informe de resultados

| ID | WBS | Task | Duration | Start | Finish | Total slack | Constraint | Resources | Work | Cost |
| --- | --- | --- | --- | --- | --- | --- | --- | --- | --- | --- |
| 102 | 3.6 | **Cursogramos** | 925d | 2024-04-01 | 2027-03-15 | 36d |  |  | 522.11h | 520 |
| 103 | 3.6.1 | Uroanalisis | 5d | 2024-04-01 | 2024-04-05 | 955.12d | start no earlier than 2024-04-01 | Marisol Briseño [105.3%] | 42.11h | 40 |
| 104 | 3.5.3 | terminacion de proceso | 36d | 2027-02-02 | 2027-03-15 | 36d | start no earlier than 2027-02-02 | Marisol Briseño | 240h | 240 |
| 105 | 3.5.2 | inicio de proceso | 36d | 2026-12-22 | 2027-02-01 | 72d | start no earlier than 2026-12-22 | Marisol Briseño | 240h | 240 |
| 106 | 3.7 | **Diagrama de bloques (flujo)** | 11d | 2024-04-01 | 2024-04-12 | 950d |  |  | 145.16h | 128 |
| 107 | 3.7.1 | Uroanalisis | 2d | 2024-04-02 | 2024-04-03 | 957.12d | start no earlier than 2024-04-02 | Marisol Briseño [114.3%] | 18.29h | 16 |
| 108 | 3.7.2 | QC | 1d | 2024-04-02 | 2024-04-02 | 959d | start no earlier than 2024-04-02 | Marisol Briseño [133.3%] | 10.67h | 8 |
| 109 | 3.7.3 | Hemato | 1d | 2024-04-01 | 2024-04-01 | 960d | start no earlier than 2024-04-01 | Marisol Briseño [133.3%] | 10.67h | 8 |
| 110 | 3.7.4 | Glico | 1d | 2024-04-01 | 2024-04-01 | 960d | start no earlier than 2024-04-01 | Marisol Briseño [133.3%] | 10.67h | 8 |
| 111 | 3.6.2 | Hemato y glico | 5d | 2024-04-08 | 2024-04-12 | 949.12d | start no earlier than 2024-04-08 | Marisol Briseño [105.3%] | 42.11h | 40 |
| 112 | 3.7.5 | Hormonas | 1d | 2024-04-01 | 2024-04-01 | 960d | start no earlier than 2024-04-01 | Marisol Briseño [133.3%] | 10.67h | 8 |
| 113 | 3.6.3 | QC | 5d | 2024-04-01 | 2024-04-05 | 955.12d | start no earlier than 2024-04-01 | Marisol Briseño [105.3%] | 42.11h | 40 |
| 114 | 3.8 | **cartas de uso de los equipos** | 5d | 2024-04-01 | 2024-04-05 | 955.12d |  |  | 42.11h | 40 |
| 115 | 3.8.1 | Las elabora RRHH | 5d | 2024-04-01 | 2024-04-05 | 955.12d | start no earlier than 2024-04-01 | Marisol Briseño [105.3%] | 42.11h | 40 |
| 116 | 3.9 | **AMEF** | 51.13d | 2024-04-01 | 2024-05-30 | 909.87d |  |  | 652.08h | 576 |
| 117 | 3.9.1 | QC | 2d | 2024-04-01 | 2024-04-02 | 958.12d | start no earlier than 2024-04-01 | Marisol Briseño [114.3%] | 18.29h | 16 |
| 118 | 3.9.2 | Hemato | 1d | 2024-04-05 | 2024-04-05 | 956d | start no earlier than 2024-04-05 | Marisol Briseño [133.3%] | 10.67h | 8 |
| 119 | 3.9.3 | Glico | 27.13d | 2024-04-01 | 2024-05-02 | 933d | start no earlier than 2024-04-01 | Marisol Briseño [116.5%] | 214.28h | 184 |
| 120 | 3.9.4 | Hormonas | 27.13d | 2024-04-01 | 2024-05-02 | 933d | start no earlier than 2024-04-01 | Marisol Briseño [116.5%] | 214.28h | 184 |
| 121 | 3.9.5 | Uro | 28.13d | 2024-04-27 | 2024-05-30 | 909.87d | start no earlier than 2024-04-27 | Marisol Briseño [105.7%] | 194.57h | 184 |
| 122 | 3.10 | **QC (todas la reaas)** | 26d | 2024-04-01 | 2024-04-30 | 935d |  |  | 224h | 168 |
| 123 | 3.10.1 | métodos cualitativos (FOR-CCI-04) | 6d | 2024-04-06 | 2024-04-12 | 950d | start no earlier than 2024-04-06 | Marisol Briseño [133.3%] | 53.33h | 40 |
| 124 | 3.10.2 | FOR-CCI-09 Graficas de control de calidad interno 2 niveles | 6d | 2024-04-12 | 2024-04-18 | 945d | start no earlier than 2024-04-12 | Marisol Briseño [133.3%] | 53.33h | 40 |
| 125 | 3.10.3 | FOR-CCI-01 Verificacion de Metodos Cuantitativos V0 | 6d | 2024-04-18 | 2024-04-24 | 940d | start no earlier than 2024-04-18 | Marisol Briseño [133.3%] | 53.33h | 40 |
| 126 | 3.10.4 | Verificación de métodos (POT-CCI-03) | 6d | 2024-04-24 | 2024-04-30 | 935d | start no earlier than 2024-04-24 | Marisol Briseño [133.3%] | 53.33h | 40 |
| 127 | 3.6.4 | Hormonas | 1d | 2024-04-01 | 2024-04-01 | 960d | start no earlier than 2024-04-01 | Marisol Briseño [133.3%] | 10.67h | 8 |
| 128 | 3.13 | Nuestro laboratorio dispone de procedimientos para responder | 6d | 2024-04-06 | 2024-04-12 | 950d | start no earlier than 2024-04-06 | Victor Baltazar [133.3%] | 53.33h | 40 |
| 129 | 3.15 | Procedimiento de toma de muestras (POT-PRE-02) | 2d | 2024-04-02 | 2024-04-03 | 957.12d | start no earlier than 2024-04-02 | Marisol Briseño [114.3%] | 18.29h | 16 |
| 130 | 3.18 | Refrigerador de proceso | 6d | 2024-04-12 | 2024-04-18 | 945d | start no earlier than 2024-04-12 | Javier Carapia [133.3%] | 53.33h | 40 |
| 131 | 3.19 | Carta de revision de requisitos | 2d | 2024-04-06 | 2024-04-08 | 954d | start no earlier than 2024-04-06 | Marisol Briseño | 8h | 8 |
| 132 | 3.20 | Mapa de proceso | 1d | 2024-04-05 | 2024-04-05 | 956d | start no earlier than 2024-04-05 | Marisol Briseño [133.3%] | 10.67h | 8 |
| 133 | 3.17 | Lockers, cuantos faltan | 1d | 2024-04-02 | 2024-04-02 | 959d | start no earlier than 2024-04-02 | Marisol Briseño [133.3%] | 10.67h | 8 |
| 134 | 3.24 | Rol para la registro de temperaturas y humedad | 1d | 2024-04-02 | 2024-04-02 | 959d | start no earlier than 2024-04-02 | Marisol Briseño [133.3%] | 10.67h | 8 |
| 135 | 3.11 | Procedimiento de recepción de muestras (POT-REC-02) | 1d | 2024-04-08 | 2024-04-08 | 954d | start no earlier than 2024-04-08 | Marisol Briseño [133.3%] | 10.67h | 8 |
| 136 | 3.25 | PLan de mejora continua | 1d | 2024-04-02 | 2024-04-02 | 959d | start no earlier than 2024-04-02 | Marisol Briseño [133.3%] | 10.67h | 8 |
| 137 | 3.12 | Instructivo para la recoleccion de eses fecales | 20.13d | 2024-04-01 | 2024-04-24 | 940d | start no earlier than 2024-04-01 | Marisol Briseño [115.3%] | 156.75h | 136 |
| 138 | 3.26 | Registro de calibraciones en cada equipo | 36d | 2026-11-10 | 2026-12-21 | 108d | start no earlier than 2026-11-10 | Marisol Briseño | 240h | 240 |

Notes:
- 128: Nuestro laboratorio dispone de procedimientos para responder cuando el fabricante retira reactivos o materiales consumibles del mercado o realiza alguna advertencia y para tomar las acciones recomendadas por este. verificar con VB
- 129: viernes 19 se terina
- 130: Las muestras de los pacientes y los materiales que se utilizan en los procesos de los análisis se almacenan de forma que se prevenga la contaminación cruzada y el deterioro para lo cual las muestras se conservan en refrigeradores y congeladores independientes a los empelados para los reactivos
- 131: El coordinador de área técnica revisa en mayo de cada año los requisitos referentes al volumen de la muestra, el dispositivo con el que se toma la muestra, y los conservantes para todos los tipos de muestra, según corresponda, para asegurar que no se tomen cantidades[JA1] insuficientes ni excesivas de muestra y que las muestras se toman adecuadamente para conservar el analito. Derivado de la revisión antes mencionada, el coordinador de área técnica debe enviar carta a dirección general informando de los cambios y actualización hacer carta para indicar de cambios en la lista de estudios

| ID | WBS | Task | Type | Duration | Start | Finish | Complete | Remaining | Total slack | Constraint | Resources | Work | Actual work | Cost | Actual cost |
| --- | --- | --- | --- | --- | --- | --- | --- | --- | --- | --- | --- | --- | --- | --- | --- |
| 139 | 4 | **6. Requerimientos de recuros** |  | 858.88d? | 2024-01-01 A | 2026-09-28 | 3% | 834.71d? | 180d |  |  | 4173.43h | 204h | 1,664 | 199.2 |
| 140 | 4.1 | **6.3 Instalaciones y condiciones ambientales** |  | 360d? | 2024-04-08 | 2025-05-31 |  |  | 595d |  | Claudia Reyes | 2773.33h |  | 280 |  |
| 141 | 4.1.1 | DOC-GEN-05 Protocolo de limpieza |  | 36d | 2024-09-03 | 2024-10-14 |  |  | 792d | start no earlier than 2024-09-03 | Javier pradel | 240h |  | 240 |  |
| 142 | 6.1.2 | Calendario de actividades |  | 3d? | 2024-04-08 | 2024-04-10 |  |  | 952d | start no earlier than 2024-04-08 |  |  |  |  |  |
| 143 | 6.1.3 | Equipo para RPBI |  | 3d? | 2024-04-08 | 2024-04-10 |  |  | 951d | start no earlier than 2024-04-08 | Nisa Alvalrez | 24h |  |  |  |
| 144 | 6.1.4 | Bote de RPB |  | 4d? | 2024-04-08 | 2024-04-11 |  |  | 950d | start no earlier than 2024-04-08 | Claudia Reyes; Marisol Briseño | 56h |  |  |  |
| 145 | 3.16 | **NUevo sanitario** |  | 351d | 2024-04-18 | 2025-05-31 |  |  | 595d | start no earlier than 2024-04-18 | Javier Carapia [133.3%] | 53.33h |  | 40 |  |
| 146 | 4.1.4 | RPBI |  | 351d | 2024-04-18 | 2025-05-31 |  |  | 595d |  |  |  |  |  |  |
| 147 | 3.21 | **FOR-REC-06 Formato de toma a domicilio** |  | 5d | 2024-04-05 | 2024-04-10 |  |  | 952d | start no earlier than 2024-04-05 | Marisol Briseño [133.3%] | 44.8h |  | 40 |  |
| 148 | 4.1.4.1 | Letreros y ubicacin de los mismos |  | 5d | 2024-04-05 | 2024-04-10 |  |  | 952d | start no earlier than 2024-04-01 | Javier Carapia [106.7%] | 34.13h |  | 32 |  |
| 149 | 3.22 | **POT-PRE-03 envio de muestras a laboratorios de referencia** |  | 481d? | 2024-04-15 | 2025-10-27 |  |  | 468d | start no earlier than 2024-04-15 | Marisol Briseño [105.3%] | 630.11h |  | 592 |  |
| 150 | 4.1.4.2 | Ruta de recoleccion |  | 36d | 2025-06-24 | 2025-08-04 |  |  | 540d | start no earlier than 2025-06-24 | Javier pradel | 240h |  | 240 |  |
| 151 | 4.1.5 | **Seguridad e higiene** |  | 481d? | 2024-04-15 | 2025-10-27 |  |  | 468d |  |  | 348h |  | 312 |  |
| 152 | 4.1.5.1 | Carpeta para formatos de seguridad e higiene |  | 433d | 2024-04-15 | 2025-09-01 |  |  | 516d |  |  |  |  |  |  |
| 153 | 4.1.5.1.1 | Preguntar con VB el tiempo de resguardo de los documentso |  | 36d | 2025-09-16 | 2025-10-27 |  |  | 468d | start no earlier than 2025-09-16 | Javier pradel | 240h |  | 240 |  |
| 154 | 4.1.5.1.2 | Colocar otro bote en bacter |  | 3d | 2024-04-15 | 2024-04-17 |  |  | 945.12d | start no earlier than 2024-04-11 | Claudia Reyes [150%] | 36h |  | 24 |  |
| 155 | 4.1.5.1.3 | Horario de depurar refri de muestras |  | 3d | 2024-04-15 | 2024-04-17 |  |  | 945.12d | start no earlier than 2024-04-11 | Marisol Briseño [150%] | 36h |  | 24 |  |
| 156 | 6.3.2.5 | Carpetas para rPBI manifistos | milestone | 0d? | 2024-04-15 | 2024-04-15 |  |  | 949d | start no earlier than 2024-04-08 |  |  |  |  |  |
| 157 | 4.1.5.1.4 | Los manifistos se archvan en la carpeta |  | 3d | 2024-04-15 | 2024-04-17 |  |  | 945.12d | start no earlier than 2024-04-11 | Claudia Reyes [150%] | 36h |  | 24 |  |
| 158 | 3.23 | **Inventario de formatos y POT's de cada area** |  | 781d | 2024-04-01 | 2026-09-28 |  |  | 180d | start no earlier than 2024-04-01 | Marisol Briseño [105.3%] | 439.2h |  | 424 |  |
| 159 | 4.1.5.2.1 | 2 caducados |  | 3d | 2024-04-01 | 2024-04-03 |  |  | 957.12d | start no earlier than 2024-01-01 | Javier Carapia [109.1%] | 26.18h |  | 24 |  |
| 160 | 4.1.5.2.3 | Pasillo de oficinas (quimico) jun.2023 |  | 3d | 2024-04-01 | 2024-04-03 |  |  | 957.12d | start no earlier than 2024-04-01 | Javier Carapia [109.1%] | 26.18h |  | 24 |  |
| 161 | 4.1.5.3.1 | El de bacter se activo, 11mar2024 |  | 36d | 2026-08-18 | 2026-09-28 |  |  | 180d | start no earlier than 2026-08-18 | Javier Carapia | 240h |  | 240 |  |
| 162 | 4.1.5.4 | **Botiquin de primeros auxilios** |  | 3d | 2024-04-01 | 2024-04-03 |  |  | 957.12d |  |  | 26.18h |  | 24 |  |
| 163 | 4.1.5.4.1 | Atencion aa pacientes, llenarlo |  | 3d | 2024-04-01 | 2024-04-03 |  |  | 957.12d | start no earlier than 2024-04-01 | Claudia Reyes [109.1%] | 26.18h |  | 24 |  |

Notes:
- 143: Bata Gogles
- 155: viernes de cada area.. mañana

| ID | WBS | Task | Type | Duration | Start | Finish | Complete | Remaining | Total slack | Constraint | Resources | Work | Actual work | Cost | Actual cost |
| --- | --- | --- | --- | --- | --- | --- | --- | --- | --- | --- | --- | --- | --- | --- | --- |
| 164 | 4.1.5.3 | **Detector de Humo** |  | 3d | 2024-04-15 | 2024-04-17 |  |  | 945.12d |  |  | 26.18h |  | 24 |  |
| 165 | 4.1.5.6.1 | Fernndo va y le mueve |  | 3d | 2024-04-15 | 2024-04-17 |  |  | 945.12d | start no earlier than 2024-04-15 | Fernando Chavarria [109.1%] | 26.18h |  | 24 |  |
| 166 | 4.1.5.7 | **Garrafones de RPBI** |  | 3d | 2024-04-01 | 2024-04-03 |  |  | 957.12d |  |  | 26.18h |  | 24 |  |
| 167 | 4.1.5.7.1 | Cambiar de garrafon, lo hace angel o el quimico |  | 3d | 2024-04-01 | 2024-04-03 |  |  | 957.12d | start no earlier than 2024-04-01 | Javier Carapia [109.1%] | 26.18h |  | 24 |  |
| 168 | 4.1.5.8 | **Quimica Clinica (equipo) y de Uroanalisis** |  | 3d | 2024-04-08 | 2024-04-10 |  |  | 951.12d |  |  | 26.18h |  | 24 |  |
| 169 | 4.1.5.8.1 | Mover los equipos para asegurar su desague |  | 3d | 2024-04-08 | 2024-04-10 |  |  | 951.12d | start no earlier than 2024-04-08 | Claudia Reyes [109.1%] | 26.18h |  | 24 |  |
| 170 | 4.2 | **6.2 Personal** |  | 606.88d? | 2024-01-01 A | 2025-12-08 | 28% | 438.72d? | 432d |  |  | 286h | 204h | 328 | 199.2 |
| 171 | 4.2.1 | FOR-RRH-44 Compromiso de Confidencialidad de Entidades Externas | milestone | 0d | 2024-04-05 | 2024-04-05 |  |  | 957d | start no earlier than 2024-04-05 | Nisa Alvalrez [133.3%] |  |  | 40 |  |
| 172 | 4.1.5.1.5 | Carpeta de archivar documentos |  | 35.88d | 2025-10-28 A | 2025-12-08 | 83% | 6d | 432d | start no earlier than 2025-10-28 | Javier pradel | 240h | 200h | 240 | 199.2 |
| 173 | 4.2.2 | Cambiar el reglemento de trabajo a la plantilla correctaa | milestone | 0d | 2024-04-08 | 2024-04-08 |  |  | 955d | start no earlier than 2024-04-08 | Eloisa Flores [126.3%] |  |  | 48 |  |
| 174 | 4.1.5.2 | Exitintores |  | 68d | 2024-01-01 | 2024-03-20 |  |  | 970.88d |  |  |  |  |  |  |
| 175 | 4.2.3 | **Organizacion del expedientes** |  | 9.88d? | 2024-04-02 A | 2024-04-12 | 9% | 9.02d? | 950d |  |  | 46h | 4h |  |  |
| 176 | 4.2.3.1 | Lista de actividades |  | 0.75d | 2024-04-02 A | 2024-04-02 | 67% | 0.25d | 959d | start no earlier than 2024-04-02 | Nisa Alvalrez | 6h | 4h |  |  |
| 177 | 6.5.5.2 | Procedimiento interno admon de expedientes |  | 5d? | 2024-04-08 | 2024-04-12 |  |  | 949d | start no earlier than 2024-04-08 | Nisa Alvalrez | 40h |  |  |  |
| 178 | 5 | **6.8 Productos y servicios proporcionados externamente** |  | 210.88d | 2024-01-01 | 2024-09-02 |  |  | 828d |  |  | 1170.45h |  | 1,096 |  |
| 179 | 5.1 | asignación de la seccio "Product no conforme" |  | 5d | 2024-04-01 | 2024-04-05 |  |  | 955.12d | start no earlier than 2024-04-01 | Jose Carapia [105.3%] | 42.11h |  | 40 |  |
| 180 | 4.1.5.2.4 | Falta el de tomografia |  | 3d | 2024-04-01 | 2024-04-03 |  |  | 957.12d | start no earlier than 2024-04-01 | Javier Carapia [109.1%] | 26.18h |  | 24 |  |
| 181 | 5.2 | Registro de proveedores |  | 1d | 2024-04-05 | 2024-04-05 |  |  | 956d | start no earlier than 2024-04-05 | Jose Carapia [133.3%] | 10.67h |  | 8 |  |
| 182 | 5.3 | POT-COM-01 Evaluacion y seleccion de proveedores jpm v0 |  | 1d | 2024-04-05 | 2024-04-05 |  |  | 956d | start no earlier than 2024-04-05 | Jose Carapia [133.3%] | 10.67h |  | 8 |  |
| 183 | 5.4 | Difusión de los horarios de recepción de mercancía |  | 1d | 2024-04-01 | 2024-04-01 |  |  | 960d | start no earlier than 2024-04-01 | Jose Carapia [133.3%] | 10.67h |  | 8 |  |
| 184 | 5.5 | Ordenes de compra |  | 5d | 2024-04-01 | 2024-04-05 |  |  | 955.12d | start no earlier than 2024-04-01 | Jose Carapia [105.3%] | 42.11h |  | 40 |  |
| 185 | 5.6 | **Revison de minimos** |  | 3d | 2024-04-10 | 2024-04-12 |  |  | 950d | start no earlier than 2024-04-10 | Jose Carapia [133.3%] | 10.67h |  | 8 |  |
| 186 | 4.1.5.5 | Lavavo de urologia |  | 3d | 2024-04-10 | 2024-04-12 |  |  | 950d |  |  |  |  |  |  |
| 187 | 5.7 | **Verificación del procedimiento POT-COM-02 Compras y abastecimiento** |  | 3d | 2024-04-08 | 2024-04-10 |  |  | 951.12d | start no earlier than 2024-04-08 | Jose Carapia [105.3%] | 51.45h |  | 64 |  |
| 188 | 4.1.5.5.1 | Indicar que lo vacie en el area de limpieza |  | 3d | 2024-04-08 | 2024-04-10 |  |  | 951.12d | start no earlier than 2024-04-08 | Marisol Briseño [109.1%] | 26.18h |  | 24 |  |

Notes:
- 171: viernes 19 de abril 2025
- 172: las carpetas en onedrive esan archivadas

| ID | WBS | Task | Duration | Start | Finish | Total slack | Constraint | Resources | Work | Cost |
| --- | --- | --- | --- | --- | --- | --- | --- | --- | --- | --- |
| 189 | 5.8 | **Activar el modulo de gastos por sucursal** | 16d | 2024-04-01 | 2024-04-18 | 945d | start no earlier than 2024-04-01 | Javier pradel [105.3%] | 95.44h | 80 |
| 190 | 4.1.5.6 | Camaras de seguridad | 3d | 2024-04-01 | 2024-04-03 | 958d |  |  |  |  |
| 191 | 5.10.1 | Cursograma | 6d | 2024-04-12 | 2024-04-18 | 945d | start no earlier than 2024-04-12 | Jose Carapia [133.3%] | 53.33h | 40 |
| 192 | 6.1.1 | LIberar el modulo de RRH para obtener el ID | 13d | 2024-04-01 | 2024-04-15 | 948d | start no earlier than 2024-04-01 |  |  |  |
| 193 | 6.2 | Calibracion de centrifugas | 1d | 2024-04-04 | 2024-04-04 | 957d | start no earlier than 2024-04-04 | Fernando Chavarria [133.3%] | 10.67h | 8 |
| 194 | 6.3 | Inventario de Equipos | 1d | 2024-07-05 | 2024-07-05 | 878d | start no earlier than 2024-07-05 | Fernando Chavarria [133.3%] | 10.67h | 8 |
| 195 | 6.1 | Solicitar checadores | 13d | 2024-01-01 | 2024-01-16 | 1025.88d |  |  |  |  |
| 196 | 6.7 | Identificación de equipos | 1d | 2024-04-08 | 2024-04-08 | 954d | start no earlier than 2024-04-08 | Fernando Chavarria [133.3%] | 10.67h | 8 |
| 197 | 6.8 | Registro de certificados de calibracion | 1d | 2024-07-03 | 2024-07-03 | 880d | start no earlier than 2024-07-03 | Fernando Chavarria [133.3%] | 10.67h | 8 |
| 198 | 6.9 | Calibración de equipos termohigrometros | 13d | 2024-04-08 | 2024-04-22 | 942d | start no earlier than 2024-04-08 | Fernando Chavarria [112.8%] | 99.28h | 88 |
| 199 | 6.10 | Registro de equipos nuevos (abbott) | 18d | 2024-08-13 | 2024-09-02 | 828d | start no earlier than 2024-08-13 | Fernando Chavarria [101.7%] | 122.03h | 120 |
| 200 | 6.11 | Abbott, impresora | 5d | 2024-04-08 | 2024-04-12 | 949.12d | start no earlier than 2024-04-08 | Fernando Chavarria [105.3%] | 42.11h | 40 |
| 201 | 6.12 | Abbott, registro de formatos de acreditacon | 5d | 2024-04-08 | 2024-04-12 | 949.12d | start no earlier than 2024-04-08 | Fernando Chavarria [105.3%] | 42.11h | 40 |
| 202 | 6.13 | Abbott, documentacion | 5d | 2024-04-08 | 2024-04-12 | 949.12d | start no earlier than 2024-04-08 | Fernando Chavarria [105.3%] | 42.11h | 40 |
| 203 | 6.14 | Desocupar cuarto de desecho de impresoras | 5d | 2024-04-15 | 2024-04-19 | 943.12d | start no earlier than 2024-04-15 | Fernando Chavarria [105.3%] | 42.11h | 40 |
| 204 | 6.15 | Usuario de equipos para el CP | 18d | 2024-08-13 | 2024-09-02 | 828d | start no earlier than 2024-08-13 | Javier pradel [101.7%] | 122.03h | 120 |
| 205 | 6.16 | Abbott, contactar al call center para el abbott link | 5d | 2024-04-01 | 2024-04-05 | 955.12d | start no earlier than 2024-04-01 | Fernando Chavarria [105.3%] | 42.11h | 40 |
| 206 | 6.17 | Abbott, conexion a internet | 5d | 2024-04-08 | 2024-04-12 | 949.12d | start no earlier than 2024-04-08 | Fernando Chavarria [105.3%] | 42.11h | 40 |
| 207 | 6.18 | Todas las PC el escritorio de acreditacion | 5d | 2024-04-08 | 2024-04-12 | 949.12d | start no earlier than 2024-04-08 | Javier pradel [105.3%]; Fernando Chavarria [105.3%] | 84.21h | 80 |
| 208 | 6.19 | Usuarios no compartidos | 5d | 2024-04-08 | 2024-04-12 | 949.12d | start no earlier than 2024-04-08 | Javier pradel [105.3%]; Fernando Chavarria [105.3%] | 84.21h | 80 |
| 209 | 6.20 | Compra de Termómetros / higrómetros | 1d | 2024-04-02 | 2024-04-02 | 959d | start no earlier than 2024-04-02 | Fernando Chavarria [133.3%] | 10.67h | 8 |
| 210 | 5.9 | Autorizacion de gastos de material, se propone que lo haga almacen | 5d | 2024-04-01 | 2024-04-05 | 955.12d | start no earlier than 2024-04-01 | Jose Carapia [105.3%] | 42.11h | 40 |
| 211 | 6.21 | Balanceo de cargas | 1d | 2024-04-03 | 2024-04-03 | 958d | start no earlier than 2024-04-03 | Fernando Chavarria [133.3%] | 10.67h | 8 |
| 212 | 7 | **SYSARCAWEB** | 6d? | 2024-07-02 | 2024-07-08 | 876d | start no earlier than 2024-07-02 |  | 145.54h | 120 |
| 213 | 8.1 | Hacer Check-in en la recepcion de mustras por sucursal | 1d? | 2024-07-02 | 2024-07-02 | 881d | start no earlier than 2024-04-16 |  |  |  |
| 214 | 8.2 | Modulo de recueros humanos para sucursales | 1d? | 2024-07-02 | 2024-07-02 | 881d | start no earlier than 2024-04-22 | Javier pradel | 8h |  |
| 215 | 8.3 | Asifnar usuario de RHH a Nisa | 1d? | 2024-07-02 | 2024-07-02 | 881d |  |  |  |  |
| 216 | 8.4 | Checkin de envio por la sucursal | 1d? | 2024-07-02 | 2024-07-02 | 881d |  |  |  |  |

Notes:
- 193: Formato a llenar o la plantilla

| ID | WBS | Task | Type | Duration | Start | Finish | Complete | Remaining | Total slack | Constraint | Resources | Work | Actual work | Cost |
| --- | --- | --- | --- | --- | --- | --- | --- | --- | --- | --- | --- | --- | --- | --- |
| 217 | 6.6 | **Calendario de mantenimiento preventivo** |  | 6d? | 2024-07-02 | 2024-07-08 |  |  | 876d | start no earlier than 2024-04-01 | Fernando Chavarria [105.3%] | 95.44h |  | 80 |
| 218 | 5.10.3 | AMEF formato |  | 6d | 2024-07-02 | 2024-07-08 |  |  | 876d | start no earlier than 2024-04-24 | Jose Carapia [133.3%] | 53.33h |  | 40 |
| 219 | 8.5.2 | Agendas en PDF por servicio | milestone | 0d | 2024-07-02 | 2024-07-02 |  |  | 882d | start no earlier than 2024-04-11 |  |  |  |  |
| 220 | 8.5.3 | Reporte de pagos al USG | milestone | 0d? | 2024-07-02 | 2024-07-02 |  |  | 882d | start no earlier than 2024-04-15 |  |  |  |  |
| 221 | 8.5.4 | Registro de USG bo se mustran los folios |  | 1d? | 2024-07-02 | 2024-07-02 |  |  | 881d |  |  |  |  |  |
| 222 | 6.4 | Mantenimiento Correctivo |  | 6d | 2024-07-02 | 2024-07-08 |  |  | 876d | start no earlier than 2024-07-01 | Fernando Chavarria [105.3%] | 42.11h |  | 40 |
| 223 | 9 | **Servicio administrativos** |  | 7d? | 2024-04-08 | 2024-04-15 |  |  | 948d |  |  | 222h |  |  |
| 224 | 9.1 | Movmientos de personal |  | 4d? | 2024-04-08 | 2024-04-11 |  |  | 950d | start no earlier than 2024-04-08 | Eloisa Flores; Nisa Alvalrez | 56h |  |  |
| 225 | 9.2 | Examen de nuevo ingreso recepcion |  | 4d? | 2024-04-08 | 2024-04-11 |  |  | 950d | start no earlier than 2024-04-08 | Nisa Alvalrez; Eloisa Flores | 56h |  |  |
| 226 | 9.3 | FOR-RRH-12 Evaluación de habilidades y conocimientos |  | 4d? | 2024-04-08 | 2024-04-11 |  |  | 950d | start no earlier than 2024-04-08 | Nisa Alvalrez; Eloisa Flores | 56h |  |  |
| 227 | 9.4 | Documetacion del radiologo |  | 7d? | 2024-04-08 | 2024-04-15 |  |  | 948d | start no earlier than 2024-04-08 |  |  |  |  |
| 228 | 9.5 | **Direccin general** |  | 3.88d? | 2024-04-08 | 2024-04-11 |  |  | 950d |  |  | 54h |  |  |
| 229 | 9.5.1 | Capacitacion RPB |  | 3d? | 2024-04-08 | 2024-04-10 |  |  | 951d | start no earlier than 2024-04-08 | Javier Carapia | 22h |  |  |
| 230 | 9.5.2 | Letreros del RPNBI |  | 4d? | 2024-04-08 | 2024-04-11 |  |  | 950d | start no earlier than 2024-04-08 | Javier Carapia | 32h |  |  |
| 231 | 10 | **8. Requistos del sistema de gestion** |  | 7.88d? | 2024-04-08 A | 2024-04-16 | 4% | 7.56d? | 947d |  |  | 168h | 8h |  |
| 232 | 10.1 | **8.6 Mejoramiento** |  | 7.88d? | 2024-04-08 A | 2024-04-16 | 4% | 7.56d? | 947d |  |  | 168h | 8h |  |
| 233 | 10.1.1 | QR a VM |  | 3d? | 2024-04-08 | 2024-04-10 |  |  | 951d | start no earlier than 2024-04-08 | Victoria Castaneda | 24h |  |  |
| 234 | 10.1.2 | Encuesata pacientes en word |  | 3d? | 2024-04-08 | 2024-04-10 |  |  | 951d | start no earlier than 2024-04-08 | Javier pradel | 24h |  |  |
| 235 | 10.1.3 | Guion para envio por email |  | 0.75d? | 2024-04-08 A | 2024-04-08 A | 100% |  |  | start no earlier than 2024-04-08 | Victoria Castaneda | 8h | 8h |  |
| 236 | 10.1.4 | Encuesta para call center |  | 5d? | 2024-04-08 | 2024-04-12 |  |  | 949d | start no earlier than 2024-04-08 | Victoria Castaneda | 40h |  |  |
| 237 | 10.1.5 | Tablet para recepcin instalarla |  | 4d? | 2024-04-08 | 2024-04-11 |  |  | 950d | start no earlier than 2024-04-08 | Victoria Castaneda | 32h |  |  |
| 238 | 10.1.6 | **Pendientes de Ubicar** |  | 3.88d? | 2024-04-12 | 2024-04-16 |  |  | 947d |  |  | 40h |  |  |
| 239 | 10.1.6.1 | Gafetes para mensajeros |  | 3d? | 2024-04-12 | 2024-04-16 |  |  | 947d | start no earlier than 2024-04-12 | Eloisa Flores; Nisa Alvalrez; Ismael Rincon | 40h |  |  |

Notes:
- 220: se paga el 50% del USG de placas es 20%
