# ARCA -SGC

Schedule from ProjectLibre, 2024-01-01 to 2027-04-26.

## Calendars

- calendario ARCA: Mon-Sat 08:00-12:00, 13:00-17:00; Sun off.

## Resources

| Resource | Group | Notes |
| --- | --- | --- |
| No Asignado |  |  |
| Javier pradel |  |  |
| Daniela M. Olivares Muñiz |  |  |
| Ismael Rincon |  |  |
| Eloisa Flores | Servicios Administrativos |  |
| Visitaduria Medica |  |  |
| todos |  |  |
| Jazmin I. Carapia Valladares |  |  |
| Marisol Briseño |  |  |
| Javier Carapia |  |  |
| Claudia Reyes |  |  |
| Fernando Chavarria |  |  |
| Victor Baltazar |  |  |
| Jose Carapia |  |  |
| Nisa Alvalrez |  | 22abr24 solo pidio cubrebocas, se le comento que hiciera el vale copleto |
| Servicios Administrativos |  |  |
| Leidy |  |  |
| Manuel |  |  |
| Gustavo |  |  |
| Victoria Castaneda |  |  |

## Schedule

| ID | WBS | Task | Duration | Start | Finish | Complete | Constraint | Resources |
| --- | --- | --- | --- | --- | --- | --- | --- | --- |
| 1 | 1 | **4. Requisitos Generales** | 103.88d? | 2024-01-01 | 2024-04-30 | 3% |  |  |
| 2 | 1.1 | **4.1 Imparcialidad** | 84.88d? | 2024-01-01 | 2024-04-08 | 6% |  |  |
| 3 | 1.1.1 | política de imparcialidad, FOR-RRH-36 | 1d | 2024-01-01 | 2024-01-02 | 100% |  |  |
| 4 | 1.1.1.1 | **Firma de personal activo** | 1d? | 2024-04-08 | 2024-04-08 |  | start no earlier than 2024-04-05 | Eloisa Flores [133.33%] |
| 5 | 1.1.2.1 | **Perfil de puestos** | 1d? | 2024-04-08 | 2024-04-08 |  |  |  |
| 6 | 1.1.2.1.1 | **Pendientes** | 1d? | 2024-04-08 | 2024-04-08 |  | start no earlier than 2024-04-08 | Nisa Alvalrez |
| 7 | 1.1.2.1.1.1 | PLan de induccion | 1d? | 2024-04-08 | 2024-04-08 |  |  |  |
| 8 | 1.1.2.1.1.2 | Asignacion de tareas | 1d? | 2024-04-08 | 2024-04-08 |  |  |  |
| 9 | 1.1.2.1.1.3 | Nombramientos | 1d? | 2024-04-08 | 2024-04-08 |  |  |  |
| 10 | 1.1.2.2 | **Firmas digitales** | 1d? | 2024-04-08 | 2024-04-08 |  | start no earlier than 2024-04-08 |  |
| 11 | 1.1.2.2.1 | Evluaciones | 1d? | 2024-04-08 | 2024-04-08 |  |  |  |
| 12 | 6.5 | **Retiro de equipos** | 2d | 2024-04-08 | 2024-04-09 | 38% | start no earlier than 2024-04-01 | Fernando Chavarria [105.26%] |
| 13 | 1.1.2 | **código de ética, FOR-RRH-04** | 2d | 2024-04-08 | 2024-04-09 | 100% | start no earlier than 2024-04-11 | Eloisa Flores [133.33%] |
| 14 | 5.10 | **AMEF** | 2d | 2024-04-08 | 2024-04-09 | 100% |  |  |
| 15 | 1.1.3 | compromiso de confidencialidad, FOR-RRH03) | 1d | 2024-04-08 | 2024-04-08 | 100% | start no earlier than 2024-04-08 | Eloisa Flores [133.33%] |
| 16 | 1.1.4 | declaración de conflicto de interés (FOR-RRH-05). | 1d | 2024-04-09 | 2024-04-09 | 100% | start no earlier than 2024-04-09 | Eloisa Flores [133.33%] |
| 17 | 1.2 | **4.2 Confidencialidad** | 7d | 2024-04-08 | 2024-04-15 |  |  |  |
| 18 | 1.2.1 | Contrato de confidencialidad para entidades externa | 6.75d | 2024-04-08 | 2024-04-15 |  | start no earlier than 2024-04-08 | Eloisa Flores [133.33%] |
| 19 | 1.3 | **4.3 Requisitos relativos a los pacientes** | 19d? | 2024-04-08 | 2024-04-29 |  |  |  |
| 20 | 1.3.1 | **derechos y deberes de los pacientes (DOC-GEN-02)** | 5d | 2024-04-08 | 2024-04-12 |  |  | Ismael Rincon |
| 21 | 1.3.1.1 | Marketing digital | 5d | 2024-04-08 | 2024-04-12 |  | start no earlier than 2024-04-08 | Ismael Rincon [133.33%] |
| 22 | 1.3.1.2 | Impreta | 5d | 2024-04-08 | 2024-04-12 |  | start no earlier than 2024-04-08 | Ismael Rincon [133.33%] |
| 23 | 1.3.2 | **procedimiento de atención a pacientes (POT-REC-01)** | 6d? | 2024-04-12 | 2024-04-18 |  | start no earlier than 2024-04-12 | Ismael Rincon [133.33%] |
| 24 | 1.4.2.1 | Capacitacion al procedmiento parte 1 | 0d? | 2024-04-12 | 2024-04-12 |  | start no earlier than 2024-04-12 | Javier pradel |
| 25 | 1.4.2.2 | Capacitacion al procedimiento parte 2 | 0.75d? | 2024-04-18 | 2024-04-18 |  | start no earlier than 2024-04-18 |  |
| 26 | 1.3.3 | catalogo de servicios (FOR-VEN-03) | 1d | 2024-04-19 | 2024-04-19 |  | start no earlier than 2024-04-19 | Visitaduria Medica [133.33%] |

Notes:
- 6: hostter intendencia mensajeria CA tecnica de equios BIomedicos CA Tecnica Auxiliar de laboratorio

| ID | WBS | Task | Duration | Start | Finish | Constraint | Resources |
| --- | --- | --- | --- | --- | --- | --- | --- |
| 27 | 1.3.4 | **revisión mensual de los indicadores de desempeño analítico (FOR-CAL-04)** | 15d? | 2024-04-08 | 2024-04-25 |  |  |
| 28 | 1.3.4.1 | PNC Preexamen | 1d | 2024-04-23 | 2024-04-23 | start no earlier than 2024-04-23 | Ismael Rincon [133.33%] |
| 29 | 1.3.4.2 | Tiempo de espera | 2.75d | 2024-04-08 | 2024-04-10 | start no earlier than 2024-04-08 | Ismael Rincon [133.33%] |
| 30 | 1.3.4.3 | **Entrega Oportuna** | 0d? | 2024-04-25 | 2024-04-25 | start no earlier than 2024-04-25 | Ismael Rincon [133.33%] |
| 31 | 1.4.4.3.1 | Lista de estudios fuera del sistema | 0d? | 2024-04-25 | 2024-04-25 | start no earlier than 2024-04-08 |  |
| 32 | 1.3.5 | actividades no conformidades y acciones no correctivas. (FOR-CAL-09) | 1d | 2024-04-26 | 2024-04-26 | start no earlier than 2024-04-26 | Ismael Rincon [133.33%] |
| 33 | 1.3.6 | **Manual para la toma, identificación, manejo, conservación y transporte de muestras (MAN-PRE-01)** | 0d? | 2024-04-27 | 2024-04-27 | start no earlier than 2024-04-27 | Ismael Rincon |
| 34 | 1.4.6.1 | Mochilas de transporte | 0d? | 2024-04-27 | 2024-04-27 | start no earlier than 2024-04-08 |  |
| 35 | 1.4.6.2 | Termometro | 0d? | 2024-04-27 | 2024-04-27 | start no earlier than 2024-04-08 |  |
| 36 | 1.4.7 | OC-GEN-01 Plan de contingencia_jpm.docx | 7d? | 2024-04-08 | 2024-04-16 | start no earlier than 2024-04-08 | Ismael Rincon |
| 37 | 1.4.8 | Capacitacion Holter, Map | 1d? | 2024-04-19 | 2024-04-19 | start no earlier than 2024-04-19 | Marisol Briseño; Nisa Alvalrez; Ismael Rincon |
| 38 | 1.4.9 | Bata Azul | 5d? | 2024-04-08 | 2024-04-12 | start no earlier than 2024-04-08 | Ismael Rincon |
| 39 | 1.4.10 | nstructivos de orina | 5d? | 2024-04-08 | 2024-04-12 | start no earlier than 2024-04-08 | Ismael Rincon |
| 40 | 1.4.11 | Eses fecales | 3.75d? | 2024-04-08 | 2024-04-11 | start no earlier than 2024-04-08 | Ismael Rincon |
| 41 | 1.4.12 | Solicitar bolsas RPBI para el mensajero | 5d? | 2024-04-08 | 2024-04-12 | start no earlier than 2024-04-08 | Ismael Rincon |
| 42 | 1.4.13 | Telefono para el mensajero | 1.75d? | 2024-04-08 | 2024-04-09 | start no earlier than 2024-04-08 | Jazmin I. Carapia Valladares; Ismael Rincon |
| 43 | 1.3.7 | control de registro (PRO-CAL-03) | 1d | 2024-04-29 | 2024-04-29 | start no earlier than 2024-04-29 | Ismael Rincon [133.33%] |
| 44 | 1.4 | Actualización de Insumos por estudio | 1d? | 2024-04-30 | 2024-04-30 | start no earlier than 2024-04-30 | Daniela M. Olivares Muñiz [133.33%] |
| 45 | 1.6 | **Solicitud de plantillas** | 100.88d? | 2024-01-01 | 2024-04-26 |  |  |
| 46 | 1.6.1 | ENDOSCOPIA Y COLONOSCOPIA | 13d? | 2024-04-12 | 2024-04-26 | start no earlier than 2024-04-12 |  |
| 47 | 1.6.2 | PLATILLA DE RM | 13d? | 2024-04-12 | 2024-04-26 | start no earlier than 2024-04-12 |  |
| 48 | 1.6.3 | MASTOGRAFIA | 13d? | 2024-04-12 | 2024-04-26 | start no earlier than 2024-04-12 |  |
| 49 | 1.6.4 | ELECTROENCEFALOGRAMA | 22.88d? | 2024-01-01 | 2024-01-26 |  |  |
| 50 | 2 | **5. Requisitos estructurales y de gobernanza** | 0.12d | 2024-05-03 | 2024-05-03 |  |  |
| 51 | 2.1 | **5.1 Entidad Legal** | 0.12d | 2024-05-03 | 2024-05-03 |  |  |
| 52 | 2.1.1 | Descripción de puestos | 0d | 2024-05-03 | 2024-05-03 | start no earlier than 2024-05-03 | Eloisa Flores [133.33%] |

Notes:
- 37: viernes, 19, la hora esta por dsfinirse

| ID | WBS | Task | Duration | Start | Finish | Complete | Constraint | Resources |
| --- | --- | --- | --- | --- | --- | --- | --- | --- |
| 53 | 3 | **6. Requerimientos de recursos** | 94.88d? | 2024-01-01 | 2024-04-19 |  |  |  |
| 54 | 3.1 | **6.2 Personal** | 94.88d? | 2024-01-01 | 2024-04-19 |  |  |  |
| 55 | 3.1.1 | **Integracion del expediente** | 94.88d? | 2024-01-01 | 2024-04-19 |  |  |  |
| 56 | 3.1.1.1 | **Evaluaciones** | 2.75d? | 2024-04-17 | 2024-04-19 |  |  |  |
| 57 | 3.1.1.1.1 | Reunion | 2.62d? | 2024-04-17 | 2024-04-19 |  | start no earlier than 2024-04-17 | Eloisa Flores |
| 58 | 3.1.1.2 | **Documentos** | 0.88d? | 2024-01-01 | 2024-01-01 |  |  |  |
| 59 | 3.1.1.2.1 | Miguel Angel Flores Hernandez | 1d? | 2024-01-01 | 2024-01-01 |  |  | Eloisa Flores |
| 60 | 3.1.2 | QUick del acceso a expedientes | 1d? | 2024-04-18 | 2024-04-18 |  | start no earlier than 2024-04-18 | Nisa Alvalrez |
| 61 | 6 | **6.4 Equipo** | 38d | 2024-04-01 | 2024-05-14 |  |  |  |
| 62 | 2.1.2 | **Mapa de procesos (DOC-CAL-01).** | 1d | 2024-05-08 | 2024-05-08 |  | start no earlier than 2024-05-06 | Eloisa Flores [133.33%] |
| 63 | 2.1.3.1 | Actualizar organigrama | 1d | 2024-05-08 | 2024-05-08 |  | start no earlier than 2024-05-08 | Javier pradel [133.33%] |
| 64 | 2.1.3 | manual de organización (MAN-RRH-01). | 5d | 2024-04-08 | 2024-04-12 |  | start no earlier than 2024-04-08 |  |
| 65 | 3.5 | **IQ** | 0.12d | 2024-05-09 | 2024-05-09 |  |  |  |
| 66 | 2.1.4 | Aviso de COFEPRIS | 0d | 2024-05-09 | 2024-05-09 |  | start no earlier than 2024-05-09 | Jazmin I. Carapia Valladares [133.33%] |
| 67 | 3.14 | Registro de Recepcion de muestras | 9.75d | 2024-04-01 | 2024-04-12 |  | start no earlier than 2024-04-01 | Marisol Briseño [105.26%] |
| 68 | 2.2 | **5.5 Objetivos y politicas** | 38d | 2024-04-01 | 2024-05-14 |  |  |  |
| 69 | 4.1.5.2.2 | Puerta de emergencia de proceso (quimico) jun.2023 | 3d | 2024-04-01 | 2024-04-03 |  | start no earlier than 2024-04-01 | Javier Carapia [109.09%] |
| 70 | 2.2.1 | Lista maestra de indicadores FOR-CAL-04) | 1d | 2024-05-13 | 2024-05-13 |  | start no earlier than 2024-05-13 | Javier pradel [133.33%] |
| 71 | 2.2.2 | Plan de mejora (FOR-CAL-15) | 1d | 2024-05-14 | 2024-05-14 |  | start no earlier than 2024-05-14 | todos [133.33%] |
| 72 | 3 | **7. Requisitos de proceso** | 961d | 2024-04-01 | 2027-04-26 | 1% |  |  |
| 73 | 3.1 | **7.3.5 Intervalos de referencia biológicos y límites de decisión clínica** | 21d | 2024-04-01 | 2024-04-24 |  |  |  |
| 74 | 3.1.1 | verifiar los puntos de referencia con el sistema | 5d | 2024-04-08 | 2024-04-12 |  | start no earlier than 2024-04-08 | Marisol Briseño [105.26%] |
| 75 | 5.10.2 | Diagrama de flujo | 5d | 2024-04-18 | 2024-04-24 |  | start no earlier than 2024-04-18 | Jose Carapia [133.33%] |
| 76 | 3.1.2 | prueba con 10 individuos con l glucosa o QS6 | 4.75d | 2024-04-08 | 2024-04-12 |  | start no earlier than 2024-04-08 | Marisol Briseño [106.67%] |
| 77 | 3.1.4 | Los intervalos de referencia biológicos y los limites de decisión clínica se deben revisar cada 3 años | 5d | 2024-04-01 | 2024-04-05 |  | start no earlier than 2024-04-01 | Marisol Briseño [105.26%] |

Notes:
- 57: Evalauciones FOR-RHH-11, FOR-RHH-12 y FOR-RHH-16 perfil de puestos
- 67: responsable katya
- 74: echo 40% pendientes 60%
- 77: cuando se lleva a cabo la revision de los procedimientos técnicos o antes en caso de que haya un cambio de meto o marca de reactivo o bien cuando haya un cambio de laboratorio subcontratado/subrrogado

| ID | WBS | Task | Duration | Start | Finish | Complete | Constraint | Resources |
| --- | --- | --- | --- | --- | --- | --- | --- | --- |
| 78 | 3.1.5 | **mensualente actualizan** | 1d | 2024-04-16 | 2024-04-16 |  |  |  |
| 79 | 3.1.5.1 | Desempeño Control de Calidad Interno (FOR-CCI-10) | 0.75d | 2024-04-16 | 2024-04-16 |  | start no earlier than 2024-04-16 | Marisol Briseño [105.26%] |
| 80 | 3.1.5.2 | Gráficos desempeñó PEEC (FOR-EEC-01) | 0.75d | 2024-04-16 | 2024-04-16 |  | start no earlier than 2024-04-16 | Marisol Briseño [105.26%] |
| 81 | 3.2 | **7.3.7.1 Generalidades** | 11d | 2024-04-24 | 2024-05-06 |  |  |  |
| 82 | 3.2.1 | incluir el nuevo equipo de abbott | 5d | 2024-04-24 | 2024-04-30 |  | start no earlier than 2024-04-24 | Marisol Briseño [133.33%] |
| 83 | 3.2.2 | Calidad interna, modificar | 5d | 2024-04-30 | 2024-05-06 |  | start no earlier than 2024-04-30 | Marisol Briseño [105.26%] |
| 84 | 3.3 | 7.3.7 Aseguramiento de la validez de los resultados del análisis | 5d | 2024-05-07 | 2024-05-13 |  | start no earlier than 2024-05-07 | Marisol Briseño [105.26%] |
| 85 | 3.4 | **Pendientes de ubicar** | 961d | 2024-04-01 | 2027-04-26 | 2% |  |  |
| 86 | 3.4.1 | Solicitar capacitacion al proveedor del equipo de URO | 30d | 2026-09-29 | 2026-11-09 |  | start no earlier than 2026-09-29 | Marisol Briseño |
| 87 | 3.4.2 | De URO iraema a carlos toribio | 30d | 2026-09-29 | 2026-11-09 |  | start no earlier than 2026-09-29 | Marisol Briseño |
| 88 | 3.4.3 | Capacitacion de RPBI | 4d | 2024-04-08 | 2024-04-11 |  | start no earlier than 2024-04-08 | Jazmin I. Carapia Valladares [50%]; Nisa Alvalrez [50%] |
| 89 | 3.4.4 | Constancias de Abbott | 5d | 2024-04-01 | 2024-04-05 |  | start no earlier than 2024-04-01 | Marisol Briseño [105.26%] |
| 90 | 3.4.5 | Constancias de Glico de david a alexis | 5d | 2024-04-01 | 2024-04-05 | 100% | start no earlier than 2024-04-01 | Marisol Briseño [105.26%] |
| 91 | 3.4.6 | **Subir los insertos de cada equipo** | 5d | 2024-04-08 | 2024-04-12 |  |  |  |
| 92 | 3.4.6.1 | Digitalizar insertos | 5d | 2024-04-08 | 2024-04-12 |  | start no earlier than 2024-04-08 | Marisol Briseño [105.26%] |
| 93 | 3.4.6.2 | Inventario de insertos para dar clave | 5d | 2024-04-08 | 2024-04-12 |  | start no earlier than 2024-04-08 | Marisol Briseño [105.26%] |
| 94 | 3.4.6.3 | Subirlos a cada equio | 5d | 2024-04-08 | 2024-04-12 |  | start no earlier than 2024-04-08 | Marisol Briseño [105.26%] |
| 95 | 3.4.7 | Constancia de hemato a frank a david y alexis e irasema | 30d | 2026-09-29 | 2026-11-09 |  | start no earlier than 2026-09-29 | Marisol Briseño |
| 96 | 3.1.3 | en el infore de resultado, colocar la leyenda de cambio de referencia o una carta al medico | 5d | 2024-04-12 | 2024-04-18 |  | start no earlier than 2024-04-12 | Marisol Briseño [133.33%] |
| 97 | 3.4.10 | Resguardo de resultados de referenciaa | 30d | 2026-09-29 | 2026-11-09 |  | start no earlier than 2026-09-29 | Marisol Briseño |
| 98 | 3.4.8 | Plan de capacitación 2024 y 2023 | 11d | 2024-04-01 | 2024-04-15 |  | start no earlier than 2024-04-01 | Marisol Briseño [112.82%] |
| 99 | 3.5.1 | Recepcion de mustras | 30d | 2026-11-10 | 2026-12-21 |  | start no earlier than 2026-11-10 | Marisol Briseño |
| 100 | 3.4.9 | Registro de calibraciones en cada equipo | 5d | 2024-04-01 | 2024-04-05 |  | start no earlier than 2024-04-01 | Marisol Briseño [105.26%] |
| 101 | 3.5.4 | validacion de resultados | 30d | 2027-03-16 | 2027-04-26 |  | start no earlier than 2027-03-16 | Marisol Briseño |

Notes:
- 88: Indagar por parte de Nisa horario y fecha, para elaborar la convocatorio
- 96: Al momento de que se detecta el cambio de valores se genera la leyenda en el informe de resultados

| ID | WBS | Task | Duration | Start | Finish | Constraint | Resources |
| --- | --- | --- | --- | --- | --- | --- | --- |
| 102 | 3.6 | **Cursogramos** | 925d | 2024-04-01 | 2027-03-15 |  |  |
| 103 | 3.6.1 | Uroanalisis | 5d | 2024-04-01 | 2024-04-05 | start no earlier than 2024-04-01 | Marisol Briseño [105.26%] |
| 104 | 3.5.3 | terminacion de proceso | 30d | 2027-02-02 | 2027-03-15 | start no earlier than 2027-02-02 | Marisol Briseño |
| 105 | 3.5.2 | inicio de proceso | 30d | 2026-12-22 | 2027-02-01 | start no earlier than 2026-12-22 | Marisol Briseño |
| 106 | 3.7 | **Diagrama de bloques (flujo)** | 11d | 2024-04-01 | 2024-04-12 |  |  |
| 107 | 3.7.1 | Uroanalisis | 2d | 2024-04-02 | 2024-04-03 | start no earlier than 2024-04-02 | Marisol Briseño [114.29%] |
| 108 | 3.7.2 | QC | 1d | 2024-04-02 | 2024-04-02 | start no earlier than 2024-04-02 | Marisol Briseño [133.33%] |
| 109 | 3.7.3 | Hemato | 1d | 2024-04-01 | 2024-04-01 | start no earlier than 2024-04-01 | Marisol Briseño [133.33%] |
| 110 | 3.7.4 | Glico | 1d | 2024-04-01 | 2024-04-01 | start no earlier than 2024-04-01 | Marisol Briseño [133.33%] |
| 111 | 3.6.2 | Hemato y glico | 5d | 2024-04-08 | 2024-04-12 | start no earlier than 2024-04-08 | Marisol Briseño [105.26%] |
| 112 | 3.7.5 | Hormonas | 1d | 2024-04-01 | 2024-04-01 | start no earlier than 2024-04-01 | Marisol Briseño [133.33%] |
| 113 | 3.6.3 | QC | 5d | 2024-04-01 | 2024-04-05 | start no earlier than 2024-04-01 | Marisol Briseño [105.26%] |
| 114 | 3.8 | **cartas de uso de los equipos** | 5d | 2024-04-01 | 2024-04-05 |  |  |
| 115 | 3.8.1 | Las elabora RRHH | 5d | 2024-04-01 | 2024-04-05 | start no earlier than 2024-04-01 | Marisol Briseño [105.26%] |
| 116 | 3.9 | **AMEF** | 51d | 2024-04-01 | 2024-05-29 |  |  |
| 117 | 3.9.1 | QC | 2d | 2024-04-01 | 2024-04-02 | start no earlier than 2024-04-01 | Marisol Briseño [114.29%] |
| 118 | 3.9.2 | Hemato | 1d | 2024-04-05 | 2024-04-05 | start no earlier than 2024-04-05 | Marisol Briseño [133.33%] |
| 119 | 3.9.3 | Glico | 23d | 2024-04-01 | 2024-05-01 | start no earlier than 2024-04-01 | Marisol Briseño [116.46%] |
| 120 | 3.9.4 | Hormonas | 23d | 2024-04-01 | 2024-05-01 | start no earlier than 2024-04-01 | Marisol Briseño [116.46%] |
| 121 | 3.9.5 | Uro | 23d | 2024-04-27 | 2024-05-29 | start no earlier than 2024-04-27 | Marisol Briseño [105.75%] |
| 122 | 3.10 | **QC (todas la reaas)** | 26d | 2024-04-01 | 2024-04-30 |  |  |
| 123 | 3.10.1 | métodos cualitativos (FOR-CCI-04) | 5d | 2024-04-06 | 2024-04-12 | start no earlier than 2024-04-06 | Marisol Briseño [133.33%] |
| 124 | 3.10.2 | FOR-CCI-09 Graficas de control de calidad interno 2 niveles | 5d | 2024-04-12 | 2024-04-18 | start no earlier than 2024-04-12 | Marisol Briseño [133.33%] |
| 125 | 3.10.3 | FOR-CCI-01 Verificacion de Metodos Cuantitativos V0 | 5d | 2024-04-18 | 2024-04-24 | start no earlier than 2024-04-18 | Marisol Briseño [133.33%] |
| 126 | 3.10.4 | Verificación de métodos (POT-CCI-03) | 5d | 2024-04-24 | 2024-04-30 | start no earlier than 2024-04-24 | Marisol Briseño [133.33%] |
| 127 | 3.6.4 | Hormonas | 1d | 2024-04-01 | 2024-04-01 | start no earlier than 2024-04-01 | Marisol Briseño [133.33%] |
| 128 | 3.13 | Nuestro laboratorio dispone de procedimientos para responder | 5d | 2024-04-06 | 2024-04-12 | start no earlier than 2024-04-06 | Victor Baltazar [133.33%] |
| 129 | 3.15 | Procedimiento de toma de muestras (POT-PRE-02) | 2d | 2024-04-02 | 2024-04-03 | start no earlier than 2024-04-02 | Marisol Briseño [114.29%] |
| 130 | 3.18 | Refrigerador de proceso | 5d | 2024-04-12 | 2024-04-18 | start no earlier than 2024-04-12 | Javier Carapia [133.33%] |
| 131 | 3.19 | Carta de revision de requisitos | 1d | 2024-04-06 | 2024-04-08 | start no earlier than 2024-04-06 | Marisol Briseño |
| 132 | 3.20 | Mapa de proceso | 1d | 2024-04-05 | 2024-04-05 | start no earlier than 2024-04-05 | Marisol Briseño [133.33%] |
| 133 | 3.17 | Lockers, cuantos faltan | 1d | 2024-04-02 | 2024-04-02 | start no earlier than 2024-04-02 | Marisol Briseño [133.33%] |
| 134 | 3.24 | Rol para la registro de temperaturas y humedad | 1d | 2024-04-02 | 2024-04-02 | start no earlier than 2024-04-02 | Marisol Briseño [133.33%] |
| 135 | 3.11 | Procedimiento de recepción de muestras (POT-REC-02) | 1d | 2024-04-08 | 2024-04-08 | start no earlier than 2024-04-08 | Marisol Briseño [133.33%] |
| 136 | 3.25 | PLan de mejora continua | 1d | 2024-04-02 | 2024-04-02 | start no earlier than 2024-04-02 | Marisol Briseño [133.33%] |
| 137 | 3.12 | Instructivo para la recoleccion de eses fecales | 17d | 2024-04-01 | 2024-04-23 | start no earlier than 2024-04-01 | Marisol Briseño [115.25%] |
| 138 | 3.26 | Registro de calibraciones en cada equipo | 30d | 2026-11-10 | 2026-12-21 | start no earlier than 2026-11-10 | Marisol Briseño |

Notes:
- 128: Nuestro laboratorio dispone de procedimientos para responder cuando el fabricante retira reactivos o materiales consumibles del mercado o realiza alguna advertencia y para tomar las acciones recomendadas por este. verificar con VB
- 129: viernes 19 se terina
- 130: Las muestras de los pacientes y los materiales que se utilizan en los procesos de los análisis se almacenan de forma que se prevenga la contaminación cruzada y el deterioro para lo cual las muestras se conservan en refrigeradores y congeladores independientes a los empelados para los reactivos
- 131: El coordinador de área técnica revisa en mayo de cada año los requisitos referentes al volumen de la muestra, el dispositivo con el que se toma la muestra, y los conservantes para todos los tipos de muestra, según corresponda, para asegurar que no se tomen cantidades[JA1] insuficientes ni excesivas de muestra y que las muestras se toman adecuadamente para conservar el analito. Derivado de la revisión antes mencionada, el coordinador de área técnica debe enviar carta a dirección general informando de los cambios y actualización hacer carta para indicar de cambios en la lista de estudios

| ID | WBS | Task | Duration | Start | Finish | Complete | Constraint | Resources |
| --- | --- | --- | --- | --- | --- | --- | --- | --- |
| 139 | 4 | **6. Requerimientos de recuros** | 780d? | 2024-04-02 | 2026-09-28 | 1% |  |  |
| 140 | 4.1 | **6.3 Instalaciones y condiciones ambientales** | 360d? | 2024-04-08 | 2025-05-31 |  |  | Claudia Reyes |
| 141 | 4.1.1 | DOC-GEN-05 Protocolo de limpieza | 30d | 2024-09-03 | 2024-10-14 |  | start no earlier than 2024-09-03 | Javier pradel |
| 142 | 6.1.2 | Calendario de actividades | 3d? | 2024-04-08 | 2024-04-10 |  | start no earlier than 2024-04-08 |  |
| 143 | 6.1.3 | Equipo para RPBI | 3d? | 2024-04-08 | 2024-04-10 |  | start no earlier than 2024-04-08 | Nisa Alvalrez |
| 144 | 6.1.4 | Bote de RPB | 3.75d? | 2024-04-08 | 2024-04-11 |  | start no earlier than 2024-04-08 | Claudia Reyes; Marisol Briseño |
| 145 | 3.16 | **NUevo sanitario** | 351d | 2024-04-18 | 2025-05-31 |  | start no earlier than 2024-04-18 | Javier Carapia [133.33%] |
| 146 | 4.1.4 | RPBI | 351d | 2024-04-18 | 2025-05-31 |  |  |  |
| 147 | 3.21 | **FOR-REC-06 Formato de toma a domicilio** | 5d | 2024-04-05 | 2024-04-10 |  | start no earlier than 2024-04-05 | Marisol Briseño [133.33%] |
| 148 | 4.1.4.1 | Letreros y ubicacin de los mismos | 4d | 2024-04-05 | 2024-04-10 |  | start no earlier than 2024-04-01 | Javier Carapia [106.67%] |
| 149 | 3.22 | **POT-PRE-03 envio de muestras a laboratorios de referencia** | 481d? | 2024-04-15 | 2025-10-27 |  | start no earlier than 2024-04-15 | Marisol Briseño [105.26%] |
| 150 | 4.1.4.2 | Ruta de recoleccion | 30d | 2025-06-24 | 2025-08-04 |  | start no earlier than 2025-06-24 | Javier pradel |
| 151 | 4.1.5 | **Seguridad e higiene** | 481d? | 2024-04-15 | 2025-10-27 |  |  |  |
| 152 | 4.1.5.1 | Carpeta para formatos de seguridad e higiene | 433d | 2024-04-15 | 2025-09-01 |  |  |  |
| 153 | 4.1.5.1.1 | Preguntar con VB el tiempo de resguardo de los documentso | 30d | 2025-09-16 | 2025-10-27 |  | start no earlier than 2025-09-16 | Javier pradel |
| 154 | 4.1.5.1.2 | Colocar otro bote en bacter | 3d | 2024-04-15 | 2024-04-17 |  | start no earlier than 2024-04-11 | Claudia Reyes [150%] |
| 155 | 4.1.5.1.3 | Horario de depurar refri de muestras | 3d | 2024-04-15 | 2024-04-17 |  | start no earlier than 2024-04-11 | Marisol Briseño [150%] |
| 156 | 6.3.2.5 | Carpetas para rPBI manifistos | 0d? | 2024-04-15 | 2024-04-15 |  | start no earlier than 2024-04-08 |  |
| 157 | 4.1.5.1.4 | Los manifistos se archvan en la carpeta | 3d | 2024-04-15 | 2024-04-17 |  | start no earlier than 2024-04-11 | Claudia Reyes [150%] |
| 158 | 3.23 | **Inventario de formatos y POT's de cada area** | 780d | 2024-04-02 | 2026-09-28 |  | start no earlier than 2024-04-01 | Marisol Briseño [105.26%] |
| 159 | 4.1.5.2.1 | 2 caducados | 3d | 2024-04-02 | 2024-04-04 |  | start no earlier than 2024-01-01 | Javier Carapia [109.09%] |
| 160 | 4.1.5.2.3 | Pasillo de oficinas (quimico) jun.2023 | 3d | 2024-04-02 | 2024-04-04 |  | start no earlier than 2024-04-01 | Javier Carapia [109.09%] |
| 161 | 4.1.5.3.1 | El de bacter se activo, 11mar2024 | 30d | 2026-08-18 | 2026-09-28 |  | start no earlier than 2026-08-18 | Javier Carapia |
| 162 | 4.1.5.4 | **Botiquin de primeros auxilios** | 3d | 2024-04-02 | 2024-04-04 |  |  |  |
| 163 | 4.1.5.4.1 | Atencion aa pacientes, llenarlo | 3d | 2024-04-02 | 2024-04-04 |  | start no earlier than 2024-04-01 | Claudia Reyes [109.09%] |

Notes:
- 143: Bata Gogles
- 155: viernes de cada area.. mañana

| ID | WBS | Task | Duration | Start | Finish | Complete | Constraint | Resources |
| --- | --- | --- | --- | --- | --- | --- | --- | --- |
| 164 | 4.1.5.3 | **Detector de Humo** | 3d | 2024-04-15 | 2024-04-17 |  |  |  |
| 165 | 4.1.5.6.1 | Fernndo va y le mueve | 3d | 2024-04-15 | 2024-04-17 |  | start no earlier than 2024-04-15 | Fernando Chavarria [109.09%] |
| 166 | 4.1.5.7 | **Garrafones de RPBI** | 3d | 2024-04-02 | 2024-04-04 |  |  |  |
| 167 | 4.1.5.7.1 | Cambiar de garrafon, lo hace angel o el quimico | 3d | 2024-04-02 | 2024-04-04 |  | start no earlier than 2024-04-01 | Javier Carapia [109.09%] |
| 168 | 4.1.5.8 | **Quimica Clinica (equipo) y de Uroanalisis** | 3d | 2024-04-08 | 2024-04-10 |  |  |  |
| 169 | 4.1.5.8.1 | Mover los equipos para asegurar su desague | 3d | 2024-04-08 | 2024-04-10 |  | start no earlier than 2024-04-08 | Claudia Reyes [109.09%] |
| 170 | 4.2 | **6.2 Personal** | 528d? | 2024-04-02 | 2025-12-08 | 25% |  |  |
| 171 | 4.2.1 | FOR-RRH-44 Compromiso de Confidencialidad de Entidades Externas | 0d | 2025-10-28 | 2025-10-28 |  | start no earlier than 2024-04-05 | Nisa Alvalrez [133.33%] |
| 172 | 4.1.5.1.5 | Carpeta de archivar documentos | 30d | 2025-10-28 | 2025-12-08 | 83% | start no earlier than 2025-10-28 | Javier pradel |
| 173 | 4.2.2 | Cambiar el reglemento de trabajo a la plantilla correctaa | 0d | 2024-04-08 | 2024-04-08 |  | start no earlier than 2024-04-08 | Eloisa Flores [126.32%] |
| 174 | 4.1.5.2 | Exitintores | 68d | 2024-04-02 | 2024-06-19 |  |  |  |
| 175 | 4.2.3 | **Organizacion del expedientes** | 10d? | 2024-04-02 | 2024-04-12 | 9% |  |  |
| 176 | 4.2.3.1 | Lista de actividades | 0.75d | 2024-04-02 | 2024-04-02 | 67% | start no earlier than 2024-04-02 | Nisa Alvalrez |
| 177 | 6.5.5.2 | Procedimiento interno admon de expedientes | 5d? | 2024-04-08 | 2024-04-12 |  | start no earlier than 2024-04-08 | Nisa Alvalrez |
| 178 | 5 | **6.8 Productos y servicios proporcionados externamente** | 210.88d | 2024-01-01 | 2024-09-02 |  |  |  |
| 179 | 5.1 | asignación de la seccio "Product no conforme" | 5d | 2024-04-01 | 2024-04-05 |  | start no earlier than 2024-04-01 | Jose Carapia [105.26%] |
| 180 | 4.1.5.2.4 | Falta el de tomografia | 3d | 2024-04-01 | 2024-04-03 |  | start no earlier than 2024-04-01 | Javier Carapia [109.09%] |
| 181 | 5.2 | Registro de proveedores | 1d | 2024-04-05 | 2024-04-05 |  | start no earlier than 2024-04-05 | Jose Carapia [133.33%] |
| 182 | 5.3 | POT-COM-01 Evaluacion y seleccion de proveedores jpm v0 | 1d | 2024-04-05 | 2024-04-05 |  | start no earlier than 2024-04-05 | Jose Carapia [133.33%] |
| 183 | 5.4 | Difusión de los horarios de recepción de mercancía | 1d | 2024-04-01 | 2024-04-01 |  | start no earlier than 2024-04-01 | Jose Carapia [133.33%] |
| 184 | 5.5 | Ordenes de compra | 5d | 2024-04-01 | 2024-04-05 |  | start no earlier than 2024-04-01 | Jose Carapia [105.26%] |
| 185 | 5.6 | **Revison de minimos** | 3d | 2024-04-10 | 2024-04-12 |  | start no earlier than 2024-04-10 | Jose Carapia [133.33%] |
| 186 | 4.1.5.5 | Lavavo de urologia | 3d | 2024-04-10 | 2024-04-12 |  |  |  |
| 187 | 5.7 | **Verificación del procedimiento POT-COM-02 Compras y abastecimiento** | 3d | 2024-04-08 | 2024-04-10 |  | start no earlier than 2024-04-08 | Jose Carapia [105.26%] |
| 188 | 4.1.5.5.1 | Indicar que lo vacie en el area de limpieza | 3d | 2024-04-08 | 2024-04-10 |  | start no earlier than 2024-04-08 | Marisol Briseño [109.09%] |

Notes:
- 171: viernes 19 de abril 2025
- 172: las carpetas en onedrive esan archivadas

| ID | WBS | Task | Duration | Start | Finish | Constraint | Resources |
| --- | --- | --- | --- | --- | --- | --- | --- |
| 189 | 5.8 | **Activar el modulo de gastos por sucursal** | 16d | 2024-04-01 | 2024-04-18 | start no earlier than 2024-04-01 | Javier pradel [105.26%] |
| 190 | 4.1.5.6 | Camaras de seguridad | 3d | 2024-04-01 | 2024-04-03 |  |  |
| 191 | 5.10.1 | Cursograma | 5d | 2024-04-12 | 2024-04-18 | start no earlier than 2024-04-12 | Jose Carapia [133.33%] |
| 192 | 6.1.1 | LIberar el modulo de RRH para obtener el ID | 12.75d | 2024-04-01 | 2024-04-15 | start no earlier than 2024-04-01 |  |
| 193 | 6.2 | Calibracion de centrifugas | 1d | 2024-04-04 | 2024-04-04 | start no earlier than 2024-04-04 | Fernando Chavarria [133.33%] |
| 194 | 6.3 | Inventario de Equipos | 1d | 2024-07-05 | 2024-07-05 | start no earlier than 2024-07-05 | Fernando Chavarria [133.33%] |
| 195 | 6.1 | Solicitar checadores | 12.75d | 2024-01-01 | 2024-01-15 |  |  |
| 196 | 6.7 | Identificación de equipos | 1d | 2024-04-08 | 2024-04-08 | start no earlier than 2024-04-08 | Fernando Chavarria [133.33%] |
| 197 | 6.8 | Registro de certificados de calibracion | 1d | 2024-07-03 | 2024-07-03 | start no earlier than 2024-07-03 | Fernando Chavarria [133.33%] |
| 198 | 6.9 | Calibración de equipos termohigrometros | 11d | 2024-04-08 | 2024-04-22 | start no earlier than 2024-04-08 | Fernando Chavarria [112.82%] |
| 199 | 6.10 | Registro de equipos nuevos (abbott) | 15d | 2024-08-13 | 2024-09-02 | start no earlier than 2024-08-13 | Fernando Chavarria [101.69%] |
| 200 | 6.11 | Abbott, impresora | 5d | 2024-04-08 | 2024-04-12 | start no earlier than 2024-04-08 | Fernando Chavarria [105.26%] |
| 201 | 6.12 | Abbott, registro de formatos de acreditacon | 5d | 2024-04-08 | 2024-04-12 | start no earlier than 2024-04-08 | Fernando Chavarria [105.26%] |
| 202 | 6.13 | Abbott, documentacion | 5d | 2024-04-08 | 2024-04-12 | start no earlier than 2024-04-08 | Fernando Chavarria [105.26%] |
| 203 | 6.14 | Desocupar cuarto de desecho de impresoras | 5d | 2024-04-15 | 2024-04-19 | start no earlier than 2024-04-15 | Fernando Chavarria [105.26%] |
| 204 | 6.15 | Usuario de equipos para el CP | 15d | 2024-08-13 | 2024-09-02 | start no earlier than 2024-08-13 | Javier pradel [101.69%] |
| 205 | 6.16 | Abbott, contactar al call center para el abbott link | 5d | 2024-04-01 | 2024-04-05 | start no earlier than 2024-04-01 | Fernando Chavarria [105.26%] |
| 206 | 6.17 | Abbott, conexion a internet | 5d | 2024-04-08 | 2024-04-12 | start no earlier than 2024-04-08 | Fernando Chavarria [105.26%] |
| 207 | 6.18 | Todas las PC el escritorio de acreditacion | 5d | 2024-04-08 | 2024-04-12 | start no earlier than 2024-04-08 | Javier pradel [105.26%]; Fernando Chavarria [105.26%] |
| 208 | 6.19 | Usuarios no compartidos | 5d | 2024-04-08 | 2024-04-12 | start no earlier than 2024-04-08 | Javier pradel [105.26%]; Fernando Chavarria [105.26%] |
| 209 | 6.20 | Compra de Termómetros / higrómetros | 1d | 2024-04-02 | 2024-04-02 | start no earlier than 2024-04-02 | Fernando Chavarria [133.33%] |
| 210 | 5.9 | Autorizacion de gastos de material, se propone que lo haga almacen | 5d | 2024-04-01 | 2024-04-05 | start no earlier than 2024-04-01 | Jose Carapia [105.26%] |
| 211 | 6.21 | Balanceo de cargas | 1d | 2024-04-03 | 2024-04-03 | start no earlier than 2024-04-03 | Fernando Chavarria [133.33%] |
| 212 | 7 | **SYSARCAWEB** | 6d? | 2024-07-02 | 2024-07-08 | start no earlier than 2024-07-02 |  |
| 213 | 8.1 | Hacer Check-in en la recepcion de mustras por sucursal | 1d? | 2024-07-02 | 2024-07-02 | start no earlier than 2024-04-16 |  |
| 214 | 8.2 | Modulo de recueros humanos para sucursales | 1d? | 2024-07-02 | 2024-07-02 | start no earlier than 2024-04-22 | Javier pradel |
| 215 | 8.3 | Asifnar usuario de RHH a Nisa | 1d? | 2024-07-02 | 2024-07-02 |  |  |
| 216 | 8.4 | Checkin de envio por la sucursal | 1d? | 2024-07-02 | 2024-07-02 |  |  |

Notes:
- 193: Formato a llenar o la plantilla

| ID | WBS | Task | Duration | Start | Finish | Complete | Constraint | Resources |
| --- | --- | --- | --- | --- | --- | --- | --- | --- |
| 217 | 6.6 | **Calendario de mantenimiento preventivo** | 6d? | 2024-07-02 | 2024-07-08 |  | start no earlier than 2024-04-01 | Fernando Chavarria [105.26%] |
| 218 | 5.10.3 | AMEF formato | 5d | 2024-07-02 | 2024-07-08 |  | start no earlier than 2024-04-24 | Jose Carapia [133.33%] |
| 219 | 8.5.2 | Agendas en PDF por servicio | 0d | 2024-07-02 | 2024-07-02 |  | start no earlier than 2024-04-11 |  |
| 220 | 8.5.3 | Reporte de pagos al USG | 0d? | 2024-07-02 | 2024-07-02 |  | start no earlier than 2024-04-15 |  |
| 221 | 8.5.4 | Registro de USG bo se mustran los folios | 1d? | 2024-07-02 | 2024-07-02 |  |  |  |
| 222 | 6.4 | Mantenimiento Correctivo | 5d | 2024-07-02 | 2024-07-08 |  | start no earlier than 2024-07-01 | Fernando Chavarria [105.26%] |
| 223 | 9 | **Servicio administrativos** | 7d? | 2024-04-08 | 2024-04-15 |  |  |  |
| 224 | 9.1 | Movmientos de personal | 3.75d? | 2024-04-08 | 2024-04-11 |  | start no earlier than 2024-04-08 | Eloisa Flores; Nisa Alvalrez |
| 225 | 9.2 | Examen de nuevo ingreso recepcion | 3.75d? | 2024-04-08 | 2024-04-11 |  | start no earlier than 2024-04-08 | Nisa Alvalrez; Eloisa Flores |
| 226 | 9.3 | FOR-RRH-12 Evaluación de habilidades y conocimientos | 3.75d? | 2024-04-08 | 2024-04-11 |  | start no earlier than 2024-04-08 | Nisa Alvalrez; Eloisa Flores |
| 227 | 9.4 | Documetacion del radiologo | 7d? | 2024-04-08 | 2024-04-15 |  | start no earlier than 2024-04-08 |  |
| 228 | 9.5 | **Direccin general** | 4d? | 2024-04-08 | 2024-04-11 |  |  |  |
| 229 | 9.5.1 | Capacitacion RPB | 2.75d? | 2024-04-08 | 2024-04-10 |  | start no earlier than 2024-04-08 | Javier Carapia |
| 230 | 9.5.2 | Letreros del RPNBI | 4d? | 2024-04-08 | 2024-04-11 |  | start no earlier than 2024-04-08 | Javier Carapia |
| 231 | 10 | **8. Requistos del sistema de gestion** | 7.27d? | 2024-04-08 | 2024-04-16 | 5% |  |  |
| 232 | 10.1 | **8.6 Mejoramiento** | 7.27d? | 2024-04-08 | 2024-04-16 | 5% |  |  |
| 233 | 10.1.1 | QR a VM | 3d? | 2024-04-08 | 2024-04-10 |  | start no earlier than 2024-04-08 | Victoria Castaneda |
| 234 | 10.1.2 | Encuesata pacientes en word | 3d? | 2024-04-08 | 2024-04-10 |  | start no earlier than 2024-04-08 | Javier pradel |
| 235 | 10.1.3 | Guion para envio por email | 1d? | 2024-04-08 | 2024-04-08 | 100% | start no earlier than 2024-04-08 | Victoria Castaneda |
| 236 | 10.1.4 | Encuesta para call center | 5d? | 2024-04-08 | 2024-04-12 |  | start no earlier than 2024-04-08 | Victoria Castaneda |
| 237 | 10.1.5 | Tablet para recepcin instalarla | 4d? | 2024-04-08 | 2024-04-11 |  | start no earlier than 2024-04-08 | Victoria Castaneda |
| 238 | 10.1.6 | **Pendientes de Ubicar** | 3.27d? | 2024-04-12 | 2024-04-16 |  |  |  |
| 239 | 10.1.6.1 | Gafetes para mensajeros | 3.27d? | 2024-04-12 | 2024-04-16 |  | start no earlier than 2024-04-12 | Eloisa Flores; Nisa Alvalrez; Ismael Rincon |

Notes:
- 220: se paga el 50% del USG de placas es 20%
